# PRD2017G09-软件工程系列课程辅助学习网站-项目计划甘特图V1.0

How a schedule from MS Project changed from version to version. A marks actual dates.

## Version 1 (data date 2017-10-28, saved 2018-10-18, file PRD-2018-G08-软件工程系列课程教学辅助网站-需求工程计划甘特图V1.1.mpp)

Note of the change: Merge remote-tracking branch 'origin/prdwad'

| ID | WBS | Task | Duration | Start | Finish | Complete |
| --- | --- | --- | --- | --- | --- | --- |
| 1 | 1 | **软件工程系列课程教学辅助网站** | 185d | 2018-09-19 A | 2019-01-13 | 12% |
| 2 | 1.1 | **项目前期准备** | 20h | 2018-09-19 A | 2018-09-30 | 80% |
| 3 | 1.1.1 | **项目范围选定** | 1h | 2018-09-19 A | 2018-09-19 A | 100% |
| 4 |  | 小组第一周会议（讨论项目选题和后期分配资源） | 1h | 2018-09-19 A | 2018-09-19 A | 100% |
| 5 |  | 资源配置 | 4h | 2018-09-21 A | 2018-09-22 | 56% |
| 6 |  | logo设计 | 4h | 2018-09-29 A | 2018-09-30 A | 100% |
| 7 | 1.2 | **可行性分析** | 9d | 2018-10-10 | 2018-10-14 | 42% |
| 8 |  | 确定业务需求和目标 | 1h | 2018-10-11 A | 2018-10-11 | 50% |
| 9 |  | 小组第三次会议记录 | 1d | 2018-10-12 A | 2018-10-12 A | 100% |
| 10 |  | 方案设计 | 2h | 2018-10-12 A | 2018-10-13 | 50% |
| 11 |  | 可行性分析报告V0.1 | 2h | 2018-10-13 A | 2018-10-14 |  |
| 12 | 1.3 | **项目计划** | 42d | 2018-09-26 | 2018-10-21 | 58% |
| 13 |  | 小组第二次会议 | 1d | 2018-09-28 | 2018-09-28 |  |
| 14 |  | 甘特图绘制V0.1 | 2h | 2018-09-29 A | 2018-09-30 A | 100% |
| 15 |  | WBS绘制 | 2h | 2018-09-29 A | 2018-09-30 A | 100% |
| 16 |  | OBS绘制 | 2h | 2018-09-29 A | 2018-09-30 A | 100% |
| 17 |  | 版本控制系统配置 | 1h | 2018-09-29 | 2018-09-29 |  |
| 18 |  | 项目计划V0.1 | 2h | 2018-09-29 A | 2018-09-30 |  |
| 19 |  | 甘特图完善V0.2 | 2h | 2018-10-11 A | 2018-10-12 A | 100% |
| 20 |  | 项目计划完善V0.2 | 2h | 2018-10-11 | 2018-10-12 |  |
| 21 |  | 小组第四次会议 | 1d | 2018-10-17 A | 2018-10-17 A | 100% |
| 22 |  | 甘特图完善V1.0 | 2h | 2018-10-17 A | 2018-10-18 A | 100% |
| 23 |  | WBS、OBS修改 | 2h | 2018-10-17 A | 2018-10-18 A | 100% |
| 24 |  | 项目计划完善V1.0 | 2h | 2018-10-17 A | 2018-10-18 |  |
| 25 |  | 小组第五次会议 | 1d | 2018-10-19 A | 2018-10-19 A | 100% |
| 26 |  | 项目章程 | 2h | 2018-10-19 A | 2018-10-20 |  |
| 27 |  | 需求工程计划-初步 | 2h | 2018-10-19 A | 2018-10-20 |  |
| 28 |  | 项目总体计划 | 6h | 2018-10-19 A | 2018-10-21 |  |
| 29 | 1.6 | **需求工程** | 90d | 2018-10-24 | 2018-12-20 |  |
| 30 |  | 小组第六次会议 | 1d | 2018-10-24 | 2018-10-24 |  |
| 31 |  | 小组第七次会议 | 1d | 2018-10-26 | 2018-10-26 |  |
| 32 | 1.6.3 | **需求获取活动** | 17d | 2018-10-29 | 2018-11-10 |  |
| 33 | 1.6.3.1 | **建立业务需求** | 8h | 2018-10-30 | 2018-11-04 |  |
| 34 | 1.6.3.1.1 | **定义产品愿景和项目范围** | 7h | 2018-10-30 | 2018-11-03 |  |
| 35 |  | 建立业务目标模型 | 1h | 2018-11-01 | 2018-11-01 |  |
| 36 |  | 干系人评审模型 | 1h | 2018-11-02 | 2018-11-02 |  |
| 37 |  | 解决业务需求冲突 | 1h | 2018-11-03 | 2018-11-03 |  |
| 38 | 1.6.3.2 | **识别用户群** | 13h | 2018-10-31 | 2018-11-08 |  |
| 39 |  | 用户分类 | 1h | 2018-10-31 | 2018-10-31 |  |
| 40 |  | 识别用户类别 | 1h | 2018-10-31 | 2018-10-31 |  |
| 41 |  | 小组第八次会议 | 1d | 2018-11-02 | 2018-11-02 |  |
| 42 |  | 组织焦点小组 | 3h | 2018-11-02 | 2018-11-03 |  |
| 43 |  | QA计划 | 1h | 2018-11-02 | 2018-11-02 |  |
| 44 |  | 分析文档 | 1d | 2018-11-05 | 2018-11-05 |  |
| 45 |  | 识别用户需求 | 1d | 2018-11-04 | 2018-11-04 |  |
| 46 |  | 分发问卷调查 | 1d | 2018-11-04 | 2018-11-04 |  |
| 47 |  | 识别系统事件和响应 | 3h | 2018-11-04 | 2018-11-06 |  |
| 48 |  | 观察用户如何完成工作 | 3h | 2018-11-04 | 2018-11-06 |  |
| 49 |  | 举办需求获取访谈 | 3h | 2018-11-05 | 2018-11-07 |  |
| 50 |  | 组内举行需求获取讨论会 | 1d | 2018-11-06 | 2018-11-06 |  |
| 51 |  | 检查问题报告 | 1h | 2018-11-07 | 2018-11-07 |  |
| 52 |  | 重用已有的需求 | 2d | 2018-11-07 | 2018-11-08 |  |
| 53 |  | 学生用户代表访谈 | 2h | 2018-11-08 | 2018-11-09 |  |
| 54 |  | 游客用户代表访谈 | 1h | 2018-11-08 | 2018-11-08 |  |
| 55 |  | 教师用户代表访谈 | 1h | 2018-11-08 | 2018-11-08 |  |
| 56 |  | 管理员用户代表访谈 | 1h | 2018-11-08 | 2018-11-08 |  |
| 57 | 1.6.4 | **需求分析** | 29d | 2018-11-09 | 2018-11-25 |  |
| 58 |  | 小组第九次会议 | 1d | 2018-11-09 | 2018-11-09 |  |
| 59 |  | 应用环境建模（生态环境图） | 4d | 2018-11-09 | 2018-11-10 |  |
| 60 |  | 设计流程图 | 4h | 2018-11-10 | 2018-11-11 |  |
| 61 |  | 分析可实现性 | 1d | 2018-11-10 | 2018-11-10 |  |
| 62 |  | 需求工程计划-修改 | 4h | 2018-11-10 | 2018-11-11 |  |
| 63 |  | 排列需求优先级 | 1d | 2018-11-11 | 2018-11-11 |  |
| 64 |  | 创建数据字典和ER图 | 4h | 2018-11-14 | 2018-11-17 |  |
| 65 |  | 需求工程计划 | 1h | 2018-11-18 | 2018-11-18 |  |
| 66 | 1.6.4.9 | **需求建模** | 9d | 2018-11-12 | 2018-11-18 |  |
| 67 |  | 数据流图绘制 | 1.5h | 2018-11-12 | 2018-11-13 |  |
| 68 |  | 转态转移图 | 1.5h | 2018-11-12 | 2018-11-13 |  |
| 69 |  | 决策树 | 1.5h | 2018-11-12 | 2018-11-13 |  |
| 70 |  | 分析接口 | 2h | 2018-11-12 | 2018-11-13 |  |

| ID | WBS | Task | Duration | Start | Finish | Predecessors |
| --- | --- | --- | --- | --- | --- | --- |
| 71 |  | 将需求分配到子系统 | 3h | 2018-11-15 | 2018-11-17 |  |
| 72 | 1.6.5 | **规范说明** | 29h | 2018-11-16 | 2018-12-02 |  |
| 73 |  | 小组第十次会议 | 1d | 2018-11-16 | 2018-11-16 |  |
| 74 |  | 采用需求文档模板 | 1d | 2018-11-17 | 2018-11-17 | 73 |
| 75 |  | 识别需求源头 | 1h | 2018-11-19 | 2018-11-19 |  |
| 76 |  | 为每个需求分配唯一标示 | 1h | 2018-11-19 | 2018-11-19 |  |
| 77 |  | 记录业务规则 | 1h | 2018-11-16 | 2018-11-16 |  |
| 78 |  | 描述非功能性需求 | 13h | 2018-11-19 | 2018-11-19 |  |
| 79 |  | 需求规格说明书--初步 | 10d | 2018-11-20 | 2018-11-25 |  |
| 80 |  | 小组第十一次会议 | 1d | 2018-11-23 | 2018-11-23 |  |
| 81 |  | 需求规格说明书--修改 | 9d | 2018-11-28 | 2018-12-02 |  |
| 82 | 1.6.6 | **需求验证** | 21d | 2018-11-27 | 2018-12-09 |  |
| 83 |  | 评审需求 | 10h | 2018-11-28 | 2018-12-03 |  |
| 84 |  | 测试需求 | 10h | 2018-11-29 | 2018-12-04 |  |
| 85 |  | 小组第十二次会议 | 1d | 2018-11-30 | 2018-11-30 |  |
| 86 |  | 定义验收条件 | 5h | 2018-11-30 | 2018-12-02 |  |
| 87 |  | 模拟需求 | 1h | 2018-12-01 | 2018-12-01 |  |
| 88 |  | 软件需求规格说明书 | 1h | 2018-12-02 | 2018-12-02 |  |
| 89 |  | 软件需求规格说明书修改 | 2h | 2018-12-06 | 2018-12-07 |  |
| 90 |  | 小组第十三次会议 | 1d | 2018-12-07 | 2018-12-07 |  |
| 91 | 1.6.7 | **需求管理** | 19h | 2018-12-11 | 2018-12-23 |  |
| 92 |  | 建立变更控制流程 | 3h | 2018-12-12 | 2018-12-14 |  |
| 93 |  | 建立基线、管理需求版本 | 3h | 2018-12-12 | 2018-12-14 |  |
| 94 |  | 分析变更影响 | 3h | 2018-12-12 | 2018-12-14 |  |
| 95 |  | 小组第十四次会议 | 1d | 2018-12-14 | 2018-12-14 |  |
| 96 |  | 维护变更历史 | 2h | 2018-12-16 | 2018-12-17 |  |
| 97 |  | 跟踪需求状态 | 3h | 2018-12-16 | 2018-12-18 |  |
| 98 |  | 跟踪需求问题 | 3h | 2018-12-17 | 2018-12-19 |  |
| 99 |  | 软件需求变更文档 | 1d | 2018-12-20 | 2018-12-20 |  |
| 100 |  | 小组第十五次会议 | 1d | 2018-12-21 | 2018-12-21 |  |
| 101 |  | 软件需求变更文档修改 | 2h | 2018-12-21 | 2018-12-22 |  |
| 102 | 1.7 | **概要设计** | 10d | 2018-12-25 | 2018-12-30 |  |
| 103 |  | 方案选择 | 1h | 2018-12-26 | 2018-12-26 |  |
| 104 |  | 功能分解（IPO图）绘制 | 3h | 2018-12-26 | 2018-12-28 |  |
| 105 |  | 软件结构设计 | 3h | 2018-12-27 | 2018-12-29 |  |
| 106 |  | 小组第十六次会议 | 1d | 2018-12-28 | 2018-12-28 |  |
| 107 |  | 数据库设计 | 2h | 2018-12-28 | 2018-12-29 |  |
| 108 |  | 系统设计与实现计划 | 1h | 2018-12-29 | 2018-12-29 |  |
| 109 |  | 软件概要设计说明--初步 | 1h | 2018-12-29 | 2018-12-29 |  |
| 110 |  | 软件概要设计说明--修改 | 1h | 2018-12-30 | 2018-12-30 |  |
| 111 | 2 | **项目总结** | 20d | 2019-01-02 | 2019-01-13 |  |
| 112 |  | 项目检验 | 6h | 2019-01-02 | 2019-01-05 |  |
| 113 |  | 小组第十七次会议 | 1d | 2019-01-04 | 2019-01-04 |  |
| 114 |  | 项目修改 | 7d | 2019-01-03 | 2019-01-06 |  |
| 115 |  | 小组第十八次会议 | 1d | 2019-01-11 | 2019-01-11 |  |
| 116 |  | 项目审核 | 11d | 2019-01-07 | 2019-01-13 |  |

## Version 2 (saved 2018-10-21, file 甘特图1.2V.mpp)

Last finish 2019-01-13 → 2019-01-14 (+1d). Complete tasks 11 → 0.

Added:

| ID | Task | Duration | Start | Finish | Resources |
| --- | --- | --- | --- | --- | --- |
| 9 | 小组第三次会议 | 1h | 2018-10-12 08:00 | 2018-10-12 09:00 | 左文正; 陈祥斌; 刘向辉; 涂弘森; 王安栋 |
| 25 | 甘特图完善1.1 | 1h | 2018-09-19 19:00 | 2018-09-19 20:00 | 王安栋 |
| 30 | 甘特图完善1.2 | 2h | 2018-10-21 19:00 | 2018-10-21 21:00 | 王安栋 |
| 68 | 需求建模 | 60h | 2018-11-12 08:00 | 2018-11-18 21:00 |  |

Removed: 9 小组第三次会议记录; 66 需求建模; 67 数据流图绘制; 68 转态转移图; 69 决策树

Changed:

| ID | Task | Start | Finish | Duration | Complete | Predecessors | Other |
| --- | --- | --- | --- | --- | --- | --- | --- |
| 1 | **软件工程系列课程教学辅助网站** | 2018-09-19 A → 2018-09-19 08:00 | 2019-01-13 → 2019-01-13 21:00 | 185d → 940h | 12% → 0% |  | resources 左文正; 陈祥斌; 刘向辉; 涂弘森; 王安栋 → 左文正 [20%]; 陈祥斌 [20%]; 刘向辉 [20%]; 涂弘森 [20%]; 王安栋 [20%] |
| 2 | **项目前期准备** | 2018-09-19 A → 2018-09-19 08:00 | 2018-09-30 → 2018-09-30 21:00 | 20h → 100h | 80% → 0% |  |  |
| 3 | **项目范围选定** | 2018-09-19 A → 2018-09-19 08:00 | 2018-09-19 A → 2018-09-30 21:00 (+11d) | 1h → 100h | 100% → 0% |  |  |
| 4 | 小组第一周会议（讨论项目选题和后期分配资源） | 2018-09-19 A → 2018-09-19 19:00 | 2018-09-19 A → 2018-09-19 21:00 | 1h → 2h | 100% → 0% |  |  |
| 5 | 资源配置 | 2018-09-21 A → 2018-09-20 08:00 (-1d) | 2018-09-22 → 2018-09-20 12:00 (-2d) |  | 56% → 0% |  | constraint none → start no earlier than 2018-09-21 19:00; resources none → 陈祥斌 |
| 6 | logo设计 | 2018-09-29 A → 2018-09-20 08:00 (-9d) | 2018-09-30 A → 2018-09-20 10:00 (-10d) | 4h → 2h | 100% → 0% |  | resources none → 涂弘森 [50%]; 刘向辉 [50%] |
| 7 | **可行性分析** | 2018-10-10 → 2018-10-10 08:00 | 2018-10-14 → 2018-10-14 17:00 | 9d → 40h | 42% → 0% |  |  |
| 8 | 确定业务需求和目标 | 2018-10-11 A → 2018-10-11 08:00 | 2018-10-11 → 2018-10-11 09:00 |  | 50% → 0% |  | resources none → 涂弘森 |
| 10 | 方案设计 | 2018-10-12 A → 2018-10-12 08:00 | 2018-10-13 → 2018-10-12 10:00 (-1d) |  | 50% → 0% |  | resources none → 涂弘森 |
| 11 | 可行性分析报告V0.1 | 2018-10-13 A → 2018-10-13 08:00 | 2018-10-14 → 2018-10-13 10:00 (-1d) |  |  |  | resources 涂弘森50%; 王安栋50% → 王安栋 [50%]; 涂弘森 [50%] |
| 12 | **项目计划** | 2018-09-26 → 2018-09-26 08:00 | 2018-10-21 → 2018-10-21 17:00 | 42d → 208h | 58% → 0% |  |  |
| 13 | 小组第二次会议 | 2018-09-28 → 2018-09-28 08:00 | 2018-09-28 → 2018-09-28 09:00 | 1d → 1h |  |  |  |
| 14 | 甘特图绘制V0.1 | 2018-09-29 A → 2018-09-29 08:00 | 2018-09-30 A → 2018-09-29 12:00 (-1d) | 2h → 4h | 100% → 0% |  | resources none → 王安栋 |
| 15 | WBS绘制 | 2018-09-29 A → 2018-09-29 08:00 | 2018-09-30 A → 2018-09-29 10:00 (-1d) |  | 100% → 0% |  | resources none → 左文正 |
| 16 | OBS绘制 | 2018-09-29 A → 2018-09-29 08:00 | 2018-09-30 A → 2018-09-29 10:00 (-1d) |  | 100% → 0% |  | resources none → 陈祥斌 |
| 17 | 版本控制系统配置 | 2018-09-29 → 2018-09-29 08:00 | 2018-09-29 → 2018-09-29 09:00 |  |  |  | resources none → 涂弘森 |
| 18 | 项目计划V0.1 | 2018-09-29 A → 2018-09-29 08:00 | 2018-09-30 → 2018-09-29 10:00 (-1d) |  |  |  | resources 左文正20%; 陈祥斌20%; 刘向辉20%; 涂弘森20%; 王安栋20% → 左文正 [20%]; 陈祥斌 [20%]; 刘向辉 [20%]; 涂弘森 [20%]; 王安栋 [20%] |
| 19 | 甘特图完善V0.2 | 2018-10-11 A → 2018-10-11 08:00 | 2018-10-12 A → 2018-10-11 10:00 (-1d) |  | 100% → 0% |  | resources none → 王安栋 |
| 20 | 项目计划完善V0.2 | 2018-10-11 → 2018-10-11 08:00 | 2018-10-12 → 2018-10-11 10:00 (-1d) |  |  |  | resources none → 左文正 |
| 21 | 小组第四次会议 | 2018-10-17 A → 2018-10-17 08:00 | 2018-10-17 A → 2018-10-17 09:00 | 1d → 1h | 100% → 0% |  |  |
| 22 | 甘特图完善V1.0 | 2018-10-17 A → 2018-10-17 08:00 | 2018-10-18 A → 2018-10-17 10:00 (-1d) |  | 100% → 0% |  | resources none → 王安栋 |
| 23 | WBS、OBS修改 | 2018-10-17 A → 2018-10-17 08:00 | 2018-10-18 A → 2018-10-17 10:00 (-1d) |  | 100% → 0% |  | resources 陈祥斌50%; 左文正50% → 左文正 [50%]; 刘向辉 [50%] |
| 24 | 项目计划完善V1.0 | 2018-10-17 A → 2018-10-17 08:00 | 2018-10-18 → 2018-10-17 10:00 (-1d) |  |  |  | resources none → 刘向辉 |
| 26 | 小组第五次会议 | 2018-10-19 A → 2018-10-19 08:00 | 2018-10-19 A → 2018-10-19 09:00 | 1d → 1h | 100% → 0% |  |  |
| 27 | 项目章程 | 2018-10-19 A → 2018-10-20 19:00 (+1d) | 2018-10-20 → 2018-10-20 22:00 | 2h → 3h |  |  | resources 涂弘森55%; 王安栋45% → 涂弘森 |
| 28 | 需求工程计划-初步 | 2018-10-19 A → 2018-10-20 19:00 (+1d) | 2018-10-20 → 2018-10-20 22:00 | 2h → 3h |  |  | resources 左文正45%; 陈祥斌55% → 左文正 [50%]; 陈祥斌 [50%] |
| 29 | 项目总体计划 | 2018-10-19 A → 2018-10-20 19:00 (+1d) | 2018-10-21 → 2018-10-20 22:00 (-1d) | 6h → 3h |  |  | resources none → 王安栋 |
| 31 | **需求工程** | 2018-10-24 → 2018-10-24 08:00 | 2018-12-20 → 2018-12-21 21:00 (+1d) | 90d → 476h |  |  |  |
| 32 | 小组第六次会议 | 2018-10-24 → 2018-10-24 08:00 | 2018-10-24 → 2018-10-24 09:00 | 1d → 1h |  |  |  |
| 33 | 小组第七次会议 | 2018-10-26 → 2018-10-26 08:00 | 2018-10-26 → 2018-10-26 09:00 | 1d → 1h |  |  |  |
| 34 | **需求获取活动** | 2018-10-29 → 2018-10-29 08:00 | 2018-11-10 → 2018-11-10 17:00 | 17d → 104h |  |  |  |
| 35 | **建立业务需求** | 2018-10-30 → 2018-10-30 19:00 | 2018-11-04 → 2018-11-04 21:00 | 8h → 49h |  |  |  |
| 36 | **定义产品愿景和项目范围** | 2018-10-30 → 2018-10-30 08:00 | 2018-11-03 → 2018-11-03 17:00 | 7h → 40h |  |  |  |
| 37 | 建立业务目标模型 | 2018-11-01 → 2018-11-01 08:00 | 2018-11-01 → 2018-11-01 09:00 |  |  |  | resources none → 陈祥斌 |
| 38 | 干系人评审模型 | 2018-11-02 → 2018-11-02 08:00 | 2018-11-02 → 2018-11-02 09:00 |  |  |  | resources 左文正25%; 刘向辉25%; 涂弘森25%; 王安栋25% → none |
| 39 | 解决业务需求冲突 | 2018-11-03 → 2018-11-03 08:00 | 2018-11-03 → 2018-11-03 09:00 |  |  |  |  |
| 40 | **识别用户群** | 2018-10-31 → 2018-10-31 08:00 | 2018-11-08 → 2018-11-01 14:00 (-7d) |  |  |  |  |
| 41 | 用户分类 | 2018-10-31 → 2018-10-31 08:00 | 2018-10-31 → 2018-10-31 09:00 |  |  |  | resources none → 王安栋 |
| 42 | 识别用户类别 | 2018-10-31 → 2018-10-31 08:00 | 2018-10-31 → 2018-10-31 09:00 |  |  |  | resources none → 涂弘森 |
| 43 | 小组第八次会议 | 2018-11-02 → 2018-11-02 19:00 | 2018-11-02 → 2018-11-02 20:00 | 1d → 1h |  |  |  |
| 44 | 组织焦点小组 | 2018-11-02 → 2018-11-02 08:00 | 2018-11-03 → 2018-11-02 11:00 (-1d) |  |  |  | resources none → 刘向辉 |
| 45 | QA计划 | 2018-11-02 → 2018-11-02 08:00 | 2018-11-02 → 2018-11-02 09:00 |  |  |  | resources 左文正; 陈祥斌; 刘向辉; 涂弘森; 王安栋 → 左文正 [20%]; 陈祥斌 [20%]; 刘向辉 [20%]; 涂弘森 [20%]; 王安栋 [20%] |
| 46 | 分析文档 | 2018-11-05 → 2018-11-05 08:00 | 2018-11-05 → 2018-11-05 09:00 | 1d → 1h |  |  | resources none → 王安栋 |
| 47 | 识别用户需求 | 2018-11-04 → 2018-11-04 08:00 | 2018-11-04 → 2018-11-04 09:00 | 1d → 1h |  |  | resources none → 左文正 |
| 48 | 分发问卷调查 | 2018-11-04 → 2018-11-04 08:00 | 2018-11-04 → 2018-11-04 09:00 | 1d → 1h |  |  | resources 涂弘森50%; 左文正50% → 涂弘森 [50%]; 刘向辉 [50%] |
| 49 | 识别系统事件和响应 | 2018-11-04 → 2018-11-04 08:00 | 2018-11-06 → 2018-11-04 11:00 (-2d) |  |  |  | resources none → 陈祥斌 |
| 50 | 观察用户如何完成工作 | 2018-11-04 → 2018-11-04 08:00 | 2018-11-06 → 2018-11-04 11:00 (-2d) |  |  |  | resources none → 王安栋 |
| 51 | 举办需求获取访谈 | 2018-11-05 → 2018-11-05 08:00 | 2018-11-07 → 2018-11-05 11:00 (-2d) |  |  |  | resources 刘向辉50%; 左文正50% → 刘向辉 |
| 52 | 组内举行需求获取讨论会 | 2018-11-06 → 2018-11-06 08:00 | 2018-11-06 → 2018-11-06 09:00 | 1d → 1h |  |  | resources none → 涂弘森 |
| 53 | 检查问题报告 | 2018-11-07 → 2018-11-07 08:00 | 2018-11-07 → 2018-11-07 09:00 |  |  |  | resources none → 刘向辉 |
| 54 | 重用已有的需求 | 2018-11-07 → 2018-11-07 08:00 | 2018-11-08 → 2018-11-07 10:00 (-1d) | 2d → 2h |  |  | resources none → 陈祥斌 |
| 55 | 学生用户代表访谈 | 2018-11-08 → 2018-11-08 08:00 | 2018-11-09 → 2018-11-08 10:00 (-1d) |  |  |  | resources none → 陈祥斌 |
| 56 | 游客用户代表访谈 | 2018-11-08 → 2018-11-08 08:00 | 2018-11-08 → 2018-11-08 09:00 |  |  |  | resources none → 王安栋 |
| 57 | 教师用户代表访谈 | 2018-11-08 → 2018-11-08 08:00 | 2018-11-08 → 2018-11-08 09:00 |  |  |  | resources none → 左文正 |
| 58 | 管理员用户代表访谈 | 2018-11-08 → 2018-11-08 08:00 | 2018-11-08 → 2018-11-08 09:00 |  |  |  | resources none → 刘向辉 |
| 59 | **需求分析** | 2018-11-09 → 2018-11-09 08:00 | 2018-11-25 → 2018-11-25 17:00 | 29d → 136h |  |  |  |
| 60 | 小组第九次会议 | 2018-11-09 → 2018-11-09 08:00 | 2018-11-09 → 2018-11-09 09:00 | 1d → 1h |  |  |  |
| 61 | 应用环境建模（生态环境图） | 2018-11-09 → 2018-11-10 19:00 (+1d) | 2018-11-10 → 2018-11-10 23:00 | 4d → 4h |  |  | resources 刘向辉50%; 陈祥斌50% → 刘向辉 [50%]; 陈祥斌 [50%] |
| 62 | 设计流程图 | 2018-11-10 → 2018-11-10 08:00 | 2018-11-11 → 2018-11-10 12:00 (-1d) |  |  |  | resources 王安栋50%; 涂弘森50% → 王安栋 [50%]; 涂弘森 [50%] |
| 63 | 分析可实现性 | 2018-11-10 → 2018-11-10 08:00 | 2018-11-10 → 2018-11-10 09:00 | 1d → 1h |  |  | resources none → 左文正 |
| 64 | 需求工程计划-修改 | 2018-11-10 → 2018-11-10 08:00 | 2018-11-11 → 2018-11-10 12:00 (-1d) |  |  |  | resources none → 左文正 |
| 65 | 排列需求优先级 | 2018-11-11 → 2018-11-11 08:00 | 2018-11-11 → 2018-11-11 09:00 | 1d → 1h |  |  | resources none → 刘向辉 |
| 66 | 创建数据字典和ER图 | 2018-11-14 → 2018-11-14 08:00 | 2018-11-17 → 2018-11-14 12:00 (-3d) |  |  |  | resources 涂弘森50%; 王安栋50% → 涂弘森 [50%]; 王安栋 [50%] |
| 67 | 需求工程计划 | 2018-11-18 → 2018-11-18 08:00 | 2018-11-18 → 2018-11-18 09:00 |  |  |  | resources none → 陈祥斌 |
| 69 | 分析接口 | 2018-11-12 → 2018-11-12 08:00 | 2018-11-13 → 2018-11-12 10:00 (-1d) |  |  |  | resources none → 涂弘森 |
| 70 | 将需求分配到子系统 | 2018-11-15 → 2018-11-15 08:00 | 2018-11-17 → 2018-11-15 11:00 (-2d) |  |  |  | resources 左文正40%; 陈祥斌30%; 刘向辉30% → 左文正 [40%]; 陈祥斌 [30%]; 刘向辉 [30%] |
| 71 | **规范说明** | 2018-11-16 → 2018-11-16 08:00 | 2018-12-02 → 2018-12-02 21:00 | 29h → 140h |  |  |  |
| 72 | 小组第十次会议 | 2018-11-16 → 2018-11-16 08:00 | 2018-11-16 → 2018-11-16 09:00 | 1d → 1h |  |  |  |
| 73 | 采用需求文档模板 | 2018-11-17 → 2018-11-17 19:00 | 2018-11-17 → 2018-11-17 21:00 | 1d → 2h |  | 72 → none | resources none → 刘向辉 |
| 74 | 识别需求源头 | 2018-11-19 → 2018-11-19 08:00 | 2018-11-19 → 2018-11-19 09:00 |  |  |  | resources none → 王安栋 |

| ID | Task | Start | Finish | Duration | Other |
| --- | --- | --- | --- | --- | --- |
| 75 | 为每个需求分配唯一标示 | 2018-11-19 → 2018-11-19 08:00 | 2018-11-19 → 2018-11-19 09:00 |  | resources none → 陈祥斌 |
| 76 | 记录业务规则 | 2018-11-16 → 2018-11-16 08:00 | 2018-11-16 → 2018-11-16 09:00 |  | resources none → 左文正 |
| 77 | 描述非功能性需求 | 2018-11-19 → 2018-11-19 08:00 | 2018-11-19 → 2018-11-19 09:00 | 13h → 1h | resources none → 涂弘森 |
| 78 | 需求规格说明书--初步 | 2018-11-20 → 2018-11-20 08:00 | 2018-11-25 → 2018-11-21 10:00 (-4d) | 10d → 10h | resources 左文正; 陈祥斌; 刘向辉; 涂弘森; 王安栋 → 左文正 [20%]; 陈祥斌 [20%]; 刘向辉 [20%]; 涂弘森 [20%]; 王安栋 [20%] |
| 79 | 小组第十一次会议 | 2018-11-23 → 2018-11-23 08:00 | 2018-11-23 → 2018-11-23 09:00 | 1d → 1h |  |
| 80 | 需求规格说明书--修改 | 2018-11-28 → 2018-12-01 19:00 (+3d) | 2018-12-02 → 2018-12-02 12:00 | 9d → 9h | resources 左文正; 陈祥斌; 刘向辉; 涂弘森; 王安栋 → 左文正 [20%]; 陈祥斌 [20%]; 刘向辉 [20%]; 涂弘森 [20%]; 王安栋 [20%] |
| 81 | **需求验证** | 2018-11-27 → 2018-11-27 08:00 | 2018-12-09 → 2018-12-09 21:00 | 21d → 108h |  |
| 82 | 评审需求 | 2018-11-28 → 2018-11-28 08:00 | 2018-12-03 → 2018-11-28 12:00 (-5d) | 10h → 4h | resources none → 王安栋 |
| 83 | 测试需求 | 2018-11-29 → 2018-11-29 08:00 | 2018-12-04 → 2018-11-29 12:00 (-5d) | 10h → 4h | resources none → 涂弘森 |
| 84 | 小组第十二次会议 | 2018-11-30 → 2018-11-30 08:00 | 2018-11-30 → 2018-11-30 09:00 | 1d → 1h |  |
| 85 | 定义验收条件 | 2018-11-30 → 2018-11-30 08:00 | 2018-12-02 → 2018-11-30 14:00 (-2d) |  | resources none → 刘向辉 |
| 86 | 模拟需求 | 2018-12-01 → 2018-12-01 08:00 | 2018-12-01 → 2018-12-01 09:00 |  | resources none → 左文正 |
| 87 | 软件需求规格说明书 | 2018-12-02 → 2018-12-02 08:00 | 2018-12-02 → 2018-12-02 09:00 |  | resources none → 陈祥斌 |
| 88 | 软件需求规格说明书修改 | 2018-12-06 → 2018-12-06 08:00 | 2018-12-07 → 2018-12-06 10:00 (-1d) |  | resources 左文正; 陈祥斌; 刘向辉; 涂弘森; 王安栋 → 左文正 [20%]; 陈祥斌 [20%]; 刘向辉 [20%]; 涂弘森 [20%]; 王安栋 [20%] |
| 89 | 小组第十三次会议 | 2018-12-07 → 2018-12-07 08:00 | 2018-12-07 → 2018-12-07 09:00 | 1d → 1h |  |
| 90 | **需求管理** | 2018-12-11 → 2018-12-11 08:00 | 2018-12-23 → 2018-12-21 21:00 (-2d) | 19h → 92h |  |
| 91 | 建立变更控制流程 | 2018-12-12 → 2018-12-12 08:00 | 2018-12-14 → 2018-12-12 11:00 (-2d) |  | resources none → 涂弘森 |
| 92 | 建立基线、管理需求版本 | 2018-12-12 → 2018-12-12 08:00 | 2018-12-14 → 2018-12-12 11:00 (-2d) |  | resources none → 陈祥斌 |
| 93 | 分析变更影响 | 2018-12-12 → 2018-12-12 08:00 | 2018-12-14 → 2018-12-12 11:00 (-2d) |  | resources none → 王安栋 |
| 94 | 小组第十四次会议 | 2018-12-14 → 2018-12-14 08:00 | 2018-12-14 → 2018-12-14 09:00 | 1d → 1h |  |
| 95 | 维护变更历史 | 2018-12-16 → 2018-12-16 08:00 | 2018-12-17 → 2018-12-16 10:00 (-1d) |  | resources none → 刘向辉 |
| 96 | 跟踪需求状态 | 2018-12-16 → 2018-12-16 08:00 | 2018-12-18 → 2018-12-16 11:00 (-2d) |  | resources none → 左文正 |
| 97 | 跟踪需求问题 | 2018-12-17 → 2018-12-17 08:00 | 2018-12-19 → 2018-12-17 11:00 (-2d) |  | resources none → 刘向辉 |
| 98 | 软件需求变更文档 | 2018-12-20 → 2018-12-20 08:00 | 2018-12-20 → 2018-12-20 09:00 | 1d → 1h | resources none → 陈祥斌 |
| 99 | 小组第十五次会议 | 2018-12-21 → 2018-12-21 08:00 | 2018-12-21 → 2018-12-21 09:00 | 1d → 1h |  |
| 100 | 软件需求变更文档修改 | 2018-12-21 → 2018-12-21 08:00 | 2018-12-22 → 2018-12-21 10:00 (-1d) |  | resources 王安栋50%; 涂弘森50% → 王安栋 [50%]; 涂弘森 [50%] |
| 101 | **概要设计** | 2018-12-25 → 2018-12-25 08:00 | 2018-12-30 → 2018-12-30 21:00 | 10d → 52h |  |
| 102 | 方案选择 | 2018-12-26 → 2018-12-26 08:00 | 2018-12-26 → 2018-12-26 09:00 |  | resources none → 刘向辉 |
| 103 | 功能分解（IPO图）绘制 | 2018-12-26 → 2018-12-26 08:00 | 2018-12-28 → 2018-12-26 11:00 (-2d) |  | resources 涂弘森50%; 王安栋50% → 涂弘森 [50%]; 王安栋 [50%] |
| 104 | 软件结构设计 | 2018-12-27 → 2018-12-27 08:00 | 2018-12-29 → 2018-12-27 11:00 (-2d) |  | resources none → 左文正 |
| 105 | 小组第十六次会议 | 2018-12-28 → 2018-12-28 08:00 | 2018-12-28 → 2018-12-28 09:00 | 1d → 1h |  |
| 106 | 数据库设计 | 2018-12-28 → 2018-12-28 08:00 | 2018-12-29 → 2018-12-28 10:00 (-1d) |  | resources none → 陈祥斌 |
| 107 | 系统设计与实现计划 | 2018-12-29 → 2018-12-29 08:00 | 2018-12-29 → 2018-12-29 09:00 |  | resources none → 刘向辉 |
| 108 | 软件概要设计说明--初步 | 2018-12-29 → 2018-12-29 08:00 | 2018-12-29 → 2018-12-29 12:00 | 1h → 4h | resources 左文正; 陈祥斌; 刘向辉; 涂弘森; 王安栋 → 左文正 [20%]; 陈祥斌 [20%]; 刘向辉 [20%]; 涂弘森 [20%]; 王安栋 [20%] |
| 109 | 软件概要设计说明--修改 | 2018-12-30 → 2018-12-30 08:00 | 2018-12-30 → 2018-12-30 12:00 | 1h → 4h | resources 左文正; 陈祥斌; 刘向辉; 涂弘森; 王安栋 → 左文正 [20%]; 陈祥斌 [20%]; 刘向辉 [20%]; 涂弘森 [20%]; 王安栋 [20%] |
| 110 | **项目总结** | 2019-01-02 → 2019-01-02 08:00 | 2019-01-13 → 2019-01-14 21:00 (+1d) | 20d → 108h |  |
| 111 | 项目检验 | 2019-01-02 → 2019-01-02 08:00 | 2019-01-05 → 2019-01-02 15:00 (-3d) |  | resources 左文正; 陈祥斌; 刘向辉; 涂弘森; 王安栋 → 左文正 [20%]; 陈祥斌 [20%]; 刘向辉 [20%]; 涂弘森 [20%]; 王安栋 [20%] |
| 112 | 小组第十七次会议 | 2019-01-04 → 2019-01-04 08:00 | 2019-01-04 → 2019-01-04 09:00 | 1d → 1h |  |
| 113 | 项目修改 | 2019-01-03 → 2019-01-02 15:00 (-1d) | 2019-01-06 → 2019-01-03 14:00 (-3d) | 7d → 7h |  |
| 114 | 小组第十八次会议 | 2019-01-11 → 2019-01-11 08:00 | 2019-01-11 → 2019-01-11 09:00 | 1d → 1h |  |
| 115 | 项目审核 | 2019-01-07 → 2019-01-13 19:00 (+6d) | 2019-01-13 → 2019-01-13 21:00 | 11d → 2h | resources 左文正; 陈祥斌; 刘向辉; 涂弘森; 王安栋 → 杨枨 [50%]; 侯宏仑 [50%] |

## Version 3 (saved 2018-10-28, file 甘特图1.3V.mpp)

Last finish 2019-01-14 → 2019-01-13 (-1d).

Added:

| ID | Task | Duration | Start | Finish | Resources |
| --- | --- | --- | --- | --- | --- |
| 9 | 第三次会议记录 | 0.5h | 2018-10-12 09:00 | 2018-10-12 09:30 | 左文正 |
| 15 | 第二次会议记录 | 0.5h | 2018-09-27 17:00 | 2018-09-28 08:30 | 左文正 |
| 20 | 项目计划PPT制作 | 2h | 2018-09-30 17:00 | 2018-09-30 20:00 | 左文正 |
| 21 | uml概述PPT | 3h | 2018-10-12 17:00 | 2018-10-13 18:00 | 左文正 [33%]; 刘向辉 [33%]; 陈祥斌 [33%] |
| 25 | 第四次会议记录 | 0.5h | 2018-10-18 17:00 | 2018-10-18 17:30 | 左文正 |
| 31 | uml工具PPT | 6h | 2018-10-20 17:00 | 2018-10-21 15:00 | 左文正 [50%]; 陈祥斌 [50%] |
| 38 | 第六次会议记录 | 0.5h | 2018-10-26 17:00 | 2018-10-26 17:30 | 左文正 |
| 39 | 需求项目计划书修订和需求项目答辩ppt | 3.5h | 2018-10-28 08:00 | 2018-10-28 11:30 | 刘向辉 |
| 41 | 甘特图完善1.3 | 3h | 2018-10-27 17:00 | 2018-10-28 11:00 | 王安栋 |
| 42 | uml工具PPT修改 | 1h | 2018-10-28 17:00 | 2018-10-28 18:00 | 王安栋 |
| 43 | uml基础1ppt | 6h | 2018-10-28 08:00 | 2018-10-28 15:00 | 左文正 [50%]; 陈祥斌 [50%] |
| 45 | 第七次会议记录 | 0.5h | 2018-10-28 17:00 | 2018-10-28 17:30 | 左文正 |
| 56 | 第八次会议记录 | 0.5h | 2018-11-02 17:00 | 2018-11-02 17:30 | 左文正 |
| 57 | uml基础2PPT | 6h | 2018-11-04 08:00 | 2018-11-04 15:00 | 刘向辉 [50%]; 涂弘森 [50%] |
| 73 | 第九次会议记录 | 0.5h | 2018-11-09 17:00 | 2018-11-09 17:30 | 左文正 |
| 79 | uml工具学习 | 4h | 2018-11-13 17:00 | 2018-11-14 20:00 | 刘向辉 |
| 87 | 第十次会议记录 | 0.5h | 2018-11-16 17:00 | 2018-11-16 17:30 | 左文正 |
| 95 | 第十一次会议记录 | 0.5h | 2018-11-23 17:00 | 2018-11-23 17:30 | 左文正 |
| 101 | 第十二次会议记录 | 0.5h | 2018-11-30 17:00 | 2018-11-30 17:30 | 左文正 |
| 107 | 第十三次会议记录 | 0.5h | 2018-11-07 17:00 | 2018-11-07 17:30 | 左文正 |
| 113 | 第十四次会议记录 | 1d | 2018-12-14 17:00 | 2018-12-14 19:00 | 左文正 |
| 119 | 第十五次会议记录 | 0.5h | 2018-12-21 17:00 | 2018-12-21 17:30 | 左文正 |
| 126 | 第十六次会议记录 | 1d | 2018-12-28 17:00 | 2018-12-28 19:00 | 左文正 |
| 134 | 第十七次会议记录 | 0.5h | 2019-01-04 17:00 | 2019-01-04 17:30 | 左文正 |
| 137 | 第十八次会议记录 | 0.5h | 2019-01-11 17:00 | 2019-01-11 17:30 | 左文正 |

Removed: 17 版本控制系统配置; 46 分析文档

Changed:

| ID | Task | Start | Finish | Duration | Other |
| --- | --- | --- | --- | --- | --- |
| 1 | **软件工程系列课程教学辅助网站** |  | 2019-01-13 21:00 → 2019-01-13 19:00 | 940h → 242h |  |
| 2 | **项目前期准备** |  |  | 100h → 34h |  |
| 3 | **项目范围选定** | 2018-09-19 08:00 → 2018-09-21 17:00 (+2d) | 2018-09-30 21:00 → 2018-09-27 20:00 (-3d) | 100h → 14h |  |
| 4 | 小组第一次会议（讨论项目选题和后期分配资源） | 2018-09-19 19:00 → 2018-09-21 17:00 (+2d) | 2018-09-19 21:00 → 2018-09-21 20:00 (+2d) |  | was named 小组第一周会议（讨论项目选题和后期分配资源） |
| 5 | 资源配置 | 2018-09-20 08:00 → 2018-09-22 17:00 (+2d) | 2018-09-20 12:00 → 2018-09-23 20:00 (+3d) |  | constraint start no earlier than 2018-09-21 19:00 → start no earlier than 2018-09-22 17:00 |
| 6 | logo设计 | 2018-09-20 08:00 → 2018-09-22 17:00 (+2d) | 2018-09-20 10:00 → 2018-09-22 20:00 (+2d) |  |  |
| 7 | **可行性分析** |  |  | 40h → 17h |  |
| 10 | 确定业务需求和目标 | 2018-10-11 08:00 → 2018-10-12 17:00 (+1d) | 2018-10-11 09:00 → 2018-10-12 18:00 (+1d) |  |  |
| 11 | 方案设计 | 2018-10-12 08:00 → 2018-10-12 17:00 | 2018-10-12 10:00 → 2018-10-12 20:00 |  |  |
| 12 | 可行性分析报告V0.1 | 2018-10-13 08:00 → 2018-10-13 19:00 | 2018-10-13 10:00 → 2018-10-13 21:00 |  |  |
| 13 | **项目计划** | 2018-09-26 08:00 → 2018-09-27 17:00 (+1d) | 2018-10-21 17:00 → 2018-10-21 19:00 | 208h → 49h |  |
| 14 | 小组第二次会议 | 2018-09-28 08:00 → 2018-09-27 17:00 (-1d) | 2018-09-28 09:00 → 2018-09-27 18:00 (-1d) |  |  |
| 16 | 甘特图绘制V0.1 | 2018-09-29 08:00 → 2018-09-27 17:00 (-2d) | 2018-09-29 12:00 → 2018-09-28 20:00 (-1d) |  |  |
| 17 | WBS绘制 | 2018-09-29 08:00 → 2018-09-29 17:00 | 2018-09-29 10:00 → 2018-09-29 20:00 |  |  |
| 18 | OBS绘制 | 2018-09-29 08:00 → 2018-09-29 17:00 | 2018-09-29 10:00 → 2018-09-29 20:00 |  |  |
| 19 | 项目计划V0.1 | 2018-09-29 08:00 → 2018-09-30 17:00 (+1d) | 2018-09-29 10:00 → 2018-09-30 20:00 (+1d) |  |  |
| 22 | 甘特图完善V0.2 | 2018-10-11 08:00 → 2018-10-13 17:00 (+2d) | 2018-10-11 10:00 → 2018-10-13 20:00 (+2d) |  |  |
| 23 | 项目计划完善V0.2 | 2018-10-11 08:00 → 2018-10-13 17:00 (+2d) | 2018-10-11 10:00 → 2018-10-13 20:00 (+2d) |  |  |
| 26 | 甘特图完善V1.0 | 2018-10-17 08:00 → 2018-10-18 17:00 (+1d) | 2018-10-17 10:00 → 2018-10-18 20:00 (+1d) |  |  |
| 27 | WBS、OBS修改 | 2018-10-17 08:00 → 2018-10-18 17:00 (+1d) | 2018-10-17 10:00 → 2018-10-19 18:00 (+2d) | 2h → 3h |  |
| 28 | 项目计划完善V1.0 | 2018-10-17 08:00 → 2018-10-18 17:00 (+1d) | 2018-10-17 10:00 → 2018-10-18 20:00 (+1d) |  |  |
| 29 | 甘特图完善1.1 | 2018-09-19 19:00 → 2018-10-18 17:00 (+29d) | 2018-09-19 20:00 → 2018-10-19 17:30 (+30d) | 1h → 2.5h |  |
| 33 | 需求工程计划-初步 |  | 2018-10-20 22:00 → 2018-10-20 20:00 | 3h → 1h | resources 左文正 [50%]; 陈祥斌 [50%] → 刘向辉 |
| 34 | 项目总体计划 |  | 2018-10-20 22:00 → 2018-10-21 17:30 (+1d) | 3h → 1.5h |  |
| 35 | 甘特图完善1.2 | 2018-10-21 19:00 → 2018-10-20 17:00 (-1d) | 2018-10-21 21:00 → 2018-10-20 19:30 (-1d) | 2h → 1.5h |  |
| 36 | **需求工程** | 2018-10-24 08:00 → 2018-10-26 17:00 (+2d) | 2018-12-21 21:00 → 2018-12-28 20:00 (+7d) | 476h → 128h |  |
| 37 | 小组第六次会议 | 2018-10-24 08:00 → 2018-10-26 17:00 (+2d) | 2018-10-24 09:00 → 2018-10-26 18:00 (+2d) |  |  |
| 40 | QA计划 | 2018-11-02 08:00 → 2018-10-27 17:00 (-6d) | 2018-11-02 09:00 → 2018-10-28 12:00 (-5d) | 1h → 4h | resources 左文正 [20%]; 陈祥斌 [20%]; 刘向辉 [20%]; 涂弘森 [20%]; 王安栋 [20%] → 涂弘森 |
| 44 | 小组第七次会议 | 2018-10-26 08:00 → 2018-10-28 17:00 (+2d) | 2018-10-26 09:00 → 2018-10-28 18:00 (+2d) |  |  |
| 46 | **需求获取活动** |  |  | 104h → 33h |  |
| 47 | **建立业务需求** |  |  | 49h → 12h |  |
| 48 | **定义产品愿景和项目范围** |  | 2018-11-03 17:00 → 2018-11-03 19:00 | 40h → 42h |  |
| 49 | 建立业务目标模型 | 2018-11-01 08:00 → 2018-10-30 17:00 (-2d) | 2018-11-01 09:00 → 2018-10-31 09:00 (-1d) |  |  |
| 50 | 干系人评审模型 | 2018-11-02 08:00 → 2018-11-01 17:00 (-1d) |  |  | resources none → 涂弘森 |
| 51 | 解决业务需求冲突 | 2018-11-03 08:00 → 2018-11-01 17:00 (-2d) | 2018-11-03 09:00 → 2018-11-02 09:00 (-1d) |  | resources none → 刘向辉 |
| 52 | **识别用户群** |  |  | 13h → 16h |  |
| 59 | 识别用户需求 | 2018-11-04 08:00 → 2018-11-03 17:00 (-1d) | 2018-11-04 09:00 → 2018-11-03 18:00 (-1d) |  |  |
| 60 | 分发问卷调查 | 2018-11-04 08:00 → 2018-11-03 17:00 (-1d) | 2018-11-04 09:00 → 2018-11-03 18:00 (-1d) |  |  |
| 61 | 识别系统事件和响应 | 2018-11-04 08:00 → 2018-11-03 17:00 (-1d) | 2018-11-04 11:00 → 2018-11-04 09:00 |  |  |
| 62 | 观察用户如何完成工作 | 2018-11-04 08:00 → 2018-11-03 17:00 (-1d) | 2018-11-04 11:00 → 2018-11-04 09:00 |  |  |
| 63 | 举办需求获取访谈 |  | 2018-11-05 11:00 → 2018-11-05 09:00 | 3h → 1h |  |
| 66 | 完善已有的需求 |  |  |  | was named 重用已有的需求 |
| 69 | 教师用户代表访谈 |  |  |  | resources 左文正 → 涂弘森 |
| 71 | **需求分析** |  |  | 136h → 41h |  |
| 74 | 应用环境建模（生态环境图） | 2018-11-10 19:00 → 2018-11-10 17:00 | 2018-11-10 23:00 → 2018-11-11 20:00 (+1d) |  |  |
| 77 | 需求工程计划-修改 |  | 2018-11-10 12:00 → 2018-11-10 09:00 | 4h → 1h |  |
| 81 | 需求分析计划 |  | 2018-11-18 09:00 → 2018-11-18 12:00 | 1h → 4h | was named 需求工程计划 |
| 82 | **需求建模** |  | 2018-11-18 21:00 → 2018-11-15 19:00 (-3d) | 60h → 16h |  |
| 84 | 将需求分配到子系统 | 2018-11-15 08:00 → 2018-11-13 17:00 (-2d) | 2018-11-15 11:00 → 2018-11-14 18:00 (-1d) |  |  |
| 85 | **规范说明** |  | 2018-12-02 21:00 → 2018-12-25 19:00 (+23d) | 140h → 88h |  |
| 93 | 需求规格说明书--初步 | 2018-11-20 08:00 → 2018-11-21 17:00 (+1d) | 2018-11-21 10:00 → 2018-11-23 19:00 (+2d) | 10h → 5h |  |
| 96 | 需求规格说明书--修改 | 2018-12-01 19:00 → 2018-12-23 17:00 (+22d) | 2018-12-02 12:00 → 2018-12-25 18:00 (+23d) | 9h → 5h |  |
| 97 | **需求验证** |  |  | 108h → 36h |  |
| 98 | 评审需求 | 2018-11-28 08:00 → 2018-11-27 17:00 (-1d) | 2018-11-28 12:00 → 2018-11-29 16:00 (+1d) | 4h → 7h | resources 王安栋 → 涂弘森 |
| 99 | 测试需求 |  | 2018-11-29 12:00 → 2018-11-29 10:00 | 4h → 2h | resources 涂弘森 → 王安栋 |
| 102 | 定义验收条件 |  | 2018-11-30 14:00 → 2018-11-30 10:00 | 5h → 2h |  |
| 108 | **需求管理** |  | 2018-12-21 21:00 → 2018-12-23 19:00 (+2d) | 92h → 34h |  |
| 109 | 建立变更控制流程 | 2018-12-12 08:00 → 2018-12-11 17:00 (-1d) | 2018-12-12 11:00 → 2018-12-12 09:00 |  |  |
| 110 | 建立基线、管理需求版本 | 2018-12-12 08:00 → 2018-12-12 17:00 | 2018-12-12 11:00 → 2018-12-13 18:00 (+1d) |  |  |
| 111 | 分析变更影响 | 2018-12-12 08:00 → 2018-12-12 17:00 | 2018-12-12 11:00 → 2018-12-13 18:00 (+1d) |  |  |
| 114 | 维护变更历史 | 2018-12-16 08:00 → 2018-12-15 17:00 (-1d) | 2018-12-16 10:00 → 2018-12-15 20:00 (-1d) |  |  |
| 115 | 跟踪需求状态 | 2018-12-16 08:00 → 2018-12-15 17:00 (-1d) | 2018-12-16 11:00 → 2018-12-16 09:00 |  |  |
| 120 | 软件需求变更文档修改 | 2018-12-21 08:00 → 2018-12-22 17:00 (+1d) | 2018-12-21 10:00 → 2018-12-23 19:00 (+2d) | 2h → 3h |  |
| 121 | **概要设计** | 2018-12-25 08:00 → 2018-12-25 17:00 | 2018-12-30 21:00 → 2019-01-04 20:00 (+5d) | 52h → 22h |  |
| 127 | 数据库设计 | 2018-12-28 08:00 → 2018-12-29 17:00 (+1d) | 2018-12-28 10:00 → 2018-12-30 19:00 (+2d) | 2h → 3h |  |
| 128 | 系统设计与实现计划 |  | 2018-12-29 09:00 → 2018-12-29 11:00 | 1h → 3h | resources 刘向辉 → 王安栋 [33%]; 涂弘森 [33%]; 陈祥斌 [33%] |
| 129 | 软件概要设计说明--初步 | 2018-12-29 08:00 → 2018-12-28 17:00 (-1d) | 2018-12-29 12:00 → 2018-12-29 10:00 |  |  |
| 130 | 软件概要设计说明--修改 | 2018-12-30 08:00 → 2018-12-29 17:00 (-1d) | 2018-12-30 12:00 → 2018-12-30 10:00 |  |  |
| 131 | **项目收尾** | 2019-01-02 08:00 → 2019-01-01 17:00 (-1d) | 2019-01-14 21:00 → 2019-01-13 19:00 (-1d) | 108h → 25h | was named 项目总结 |
| 132 | 项目检验 | 2019-01-02 08:00 → 2019-01-01 17:00 (-1d) | 2019-01-02 15:00 → 2019-01-04 18:00 (+2d) | 6h → 7h |  |

| ID | Task | Start | Finish | Duration |
| --- | --- | --- | --- | --- |
| 135 | 项目修改 | 2019-01-02 15:00 → 2019-01-05 17:00 (+3d) | 2019-01-03 14:00 → 2019-01-10 19:00 (+7d) | 7h → 11h |
| 138 | 项目审核 | 2019-01-13 19:00 → 2019-01-12 17:00 (-1d) | 2019-01-13 21:00 → 2019-01-12 20:00 (-1d) |  |

## Version 4 (saved 2018-10-28, file 甘特图1.3V.mpp)

Last finish 2019-01-13 → 2019-01-14 (+1d).

Removed: 136 小组第十八次会议; 137 第十八次会议记录

Changed:

| ID | Task | Start | Finish | Duration |
| --- | --- | --- | --- | --- |
| 1 | **软件工程系列课程教学辅助网站** |  | 2019-01-13 19:00 → 2019-01-14 19:00 (+1d) | 242h → 253h |
| 53 | 小组第七次会议 | 2018-10-28 17:00 → 2018-11-02 19:00 (+5d) | 2018-10-28 18:00 → 2018-11-02 20:00 (+5d) |  |
| 54 | 第七次会议记录 | 2018-10-28 17:00 → 2018-11-02 17:00 (+5d) | 2018-10-28 17:30 → 2018-11-02 17:30 (+5d) |  |
| 70 | 小组第八次会议 | 2018-11-02 19:00 → 2018-11-09 08:00 (+7d) | 2018-11-02 20:00 → 2018-11-09 09:00 (+7d) |  |
| 71 | 第八次会议记录 | 2018-11-02 17:00 → 2018-11-09 17:00 (+7d) | 2018-11-02 17:30 → 2018-11-09 17:30 (+7d) |  |
| 84 | 小组第九次会议 | 2018-11-09 08:00 → 2018-11-16 08:00 (+7d) | 2018-11-09 09:00 → 2018-11-16 09:00 (+7d) |  |
| 85 | 第九次会议记录 | 2018-11-09 17:00 → 2018-11-16 17:00 (+7d) | 2018-11-09 17:30 → 2018-11-16 17:30 (+7d) |  |
| 92 | 小组第十次会议 | 2018-11-16 08:00 → 2018-11-23 08:00 (+7d) | 2018-11-16 09:00 → 2018-11-23 09:00 (+7d) |  |
| 93 | 第十次会议记录 | 2018-11-16 17:00 → 2018-11-23 17:00 (+7d) | 2018-11-16 17:30 → 2018-11-23 17:30 (+7d) |  |
| 98 | 小组第十一次会议 | 2018-11-23 08:00 → 2018-11-30 08:00 (+7d) | 2018-11-23 09:00 → 2018-11-30 09:00 (+7d) |  |
| 99 | 第十一次会议记录 | 2018-11-23 17:00 → 2018-11-30 17:00 (+7d) | 2018-11-23 17:30 → 2018-11-30 17:30 (+7d) |  |
| 104 | 小组第十二次会议 | 2018-11-30 08:00 → 2018-12-07 08:00 (+7d) | 2018-11-30 09:00 → 2018-12-07 09:00 (+7d) |  |
| 105 | 第十二次会议记录 | 2018-11-30 17:00 → 2018-11-07 17:00 (-23d) | 2018-11-30 17:30 → 2018-11-07 17:30 (-23d) |  |
| 110 | 小组第十三次会议 | 2018-12-07 08:00 → 2018-12-14 08:00 (+7d) | 2018-12-07 09:00 → 2018-12-14 09:00 (+7d) |  |
| 111 | 第十三次会议记录 | 2018-11-07 17:00 → 2018-12-14 17:00 (+37d) | 2018-11-07 17:30 → 2018-12-14 19:00 (+37d) | 0.5h → 1d |
| 116 | 小组第十四次会议 | 2018-12-14 08:00 → 2018-12-21 08:00 (+7d) | 2018-12-14 09:00 → 2018-12-21 09:00 (+7d) |  |
| 117 | 第十四次会议记录 | 2018-12-14 17:00 → 2018-12-21 17:00 (+7d) | 2018-12-14 19:00 → 2018-12-21 17:30 (+7d) | 1d → 0.5h |
| 123 | 小组第十五次会议 | 2018-12-21 08:00 → 2018-12-28 08:00 (+7d) | 2018-12-21 09:00 → 2018-12-28 09:00 (+7d) |  |
| 124 | 第十五次会议记录 | 2018-12-21 17:00 → 2018-12-28 17:00 (+7d) | 2018-12-21 17:30 → 2018-12-28 19:00 (+7d) | 0.5h → 1d |
| 131 | 小组第十六次会议 | 2018-12-28 08:00 → 2019-01-04 08:00 (+7d) | 2018-12-28 09:00 → 2019-01-04 09:00 (+7d) |  |
| 132 | 第十六次会议记录 | 2018-12-28 17:00 → 2019-01-04 17:00 (+7d) | 2018-12-28 19:00 → 2019-01-04 17:30 (+7d) | 1d → 0.5h |
| 134 | 小组第十七次会议 | 2019-01-04 08:00 → 2019-01-11 08:00 (+7d) | 2019-01-04 09:00 → 2019-01-11 09:00 (+7d) |  |
| 135 | 第十七次会议记录 | 2019-01-04 17:00 → 2019-01-11 17:00 (+7d) | 2019-01-04 17:30 → 2019-01-11 17:30 (+7d) |  |

## Version 5 (saved 2018-10-30, file 甘特图1.4V.mpp)

Last finish stays 2019-01-14.

Added:

| ID | Task | Duration | Start | Finish |
| --- | --- | --- | --- | --- |
| 64 | **用户代表访谈** | 0d | 2018-11-08 17:00 | 2018-11-08 20:00 |

Removed: 10 确定业务需求和目标; 94 需求规格说明书--修改

Changed:

| ID | Task | Start | Finish | Duration | Predecessors | Other |
| --- | --- | --- | --- | --- | --- | --- |
| 5 | 资源配置 |  |  |  | none → 4 |  |
| 6 | logo设计 |  |  |  | none → 4 |  |
| 8 | 小组第三次会议 | 2018-10-12 08:00 → 2018-10-12 19:00 | 2018-10-12 09:00 → 2018-10-12 20:00 |  | none → 13FS+30h |  |
| 9 | 第三次会议记录 | 2018-10-12 09:00 → 2018-10-12 16:00 | 2018-10-12 09:30 → 2018-10-12 16:30 |  | none → 8SS-1h |  |
| 10 | 方案设计 | 2018-10-12 17:00 → 2018-10-12 19:00 | 2018-10-12 20:00 → 2018-10-13 18:00 (+1d) |  | none → 8FS-1h |  |
| 11 | 可行性分析报告V0.1 | 2018-10-13 19:00 → 2018-10-13 17:00 | 2018-10-13 21:00 → 2018-10-13 20:00 |  | none → 8 |  |
| 13 | 小组第二次会议 |  |  |  | none → 4FS+10h |  |
| 14 | 第二次会议记录 | 2018-09-27 17:00 → 2018-09-28 08:00 (+1d) |  |  | none → 13 |  |
| 15 | 甘特图绘制V0.1 | 2018-09-27 17:00 → 2018-09-27 19:00 | 2018-09-28 20:00 → 2018-09-29 18:00 (+1d) |  | none → 13 |  |
| 16 | WBS绘制 |  |  |  | none → 13FS+3h |  |
| 17 | OBS绘制 |  | 2018-09-29 20:00 → 2018-09-29 18:00 | 2h → 1h | none → 13FS+3h |  |
| 18 | 需求项目计划V0.1 |  |  |  | none → 13FS+5h | was named 项目计划V0.1 |
| 19 | 需求项目计划PPT制作 |  |  |  | none → 18FS-2h | was named 项目计划PPT制作 |
| 21 | 甘特图完善V0.2 |  |  |  | none → 15FS+27h |  |
| 22 | 需求项目计划完善V0.2 | 2018-10-13 17:00 → 2018-10-12 17:00 (-1d) | 2018-10-13 20:00 → 2018-10-12 20:00 (-1d) |  | none → 18FS+22h | was named 项目计划完善V0.2; resources 左文正 → 左文正 [50%]; 刘向辉 [50%] |
| 23 | 小组第四次会议 | 2018-10-17 08:00 → 2018-10-17 19:00 | 2018-10-17 09:00 → 2018-10-17 20:00 |  | none → 8FS+9h |  |
| 24 | 第四次会议记录 | 2018-10-18 17:00 → 2018-10-18 08:00 | 2018-10-18 17:30 → 2018-10-18 08:30 |  | none → 23 |  |
| 25 | 甘特图完善V1.0 |  | 2018-10-18 20:00 → 2018-10-18 19:00 | 2h → 1h | none → 21FS+8h |  |
| 26 | 需求项目计划完善V1.0 | 2018-10-18 17:00 → 2018-10-17 19:00 (-1d) | 2018-10-18 20:00 → 2018-10-18 18:00 |  | none → 22FS+9h | was named 项目计划完善V1.0 |
| 27 | WBS、OBS修改 |  |  |  | none → 16FS+36h |  |
| 28 | 甘特图完善1.1 |  |  |  | none → 25FS-1h |  |
| 29 | 小组第五次会议 | 2018-10-19 08:00 → 2018-10-19 17:00 | 2018-10-19 09:00 → 2018-10-19 18:00 |  | none → 23FS+2h |  |
| 30 | uml工具PPT | 2018-10-20 17:00 → 2018-10-20 08:00 | 2018-10-21 15:00 → 2018-10-20 15:00 (-1d) |  |  |  |
| 31 | 项目章程 | 2018-10-20 19:00 → 2018-10-20 17:00 | 2018-10-20 22:00 → 2018-10-21 18:00 (+1d) |  | none → 29FS+1h |  |
| 32 | 需求工程计划-初步 | 2018-10-20 19:00 → 2018-10-20 17:00 | 2018-10-20 20:00 → 2018-10-20 18:00 |  | none → 26FS+3h |  |
| 33 | 项目总体计划 |  |  |  | none → 29FS+2h |  |
| 34 | 甘特图完善1.2 | 2018-10-20 17:00 → 2018-10-20 17:30 | 2018-10-20 19:30 → 2018-10-20 20:00 |  | none → 28FS+2h |  |
| 36 | 小组第六次会议 | 2018-10-26 17:00 → 2018-10-26 19:00 | 2018-10-26 18:00 → 2018-10-26 20:00 |  | none → 29FS+14h |  |
| 37 | 第六次会议记录 | 2018-10-26 17:00 → 2018-10-26 16:00 | 2018-10-26 17:30 → 2018-10-26 16:30 |  | none → 36FS-1h |  |
| 40 | 甘特图完善1.3 |  |  |  | none → 34FS+30h |  |
| 41 | uml工具PPT修改 |  | 2018-10-28 18:00 → 2018-10-28 19:00 | 1h → 2h | none → 30FS+16h |  |
| 42 | uml基础1ppt | 2018-10-28 08:00 → 2018-10-27 17:00 (-1d) |  |  | none → 36FS+3h |  |
| 46 | 建立业务目标模型 | 2018-10-30 17:00 → 2018-11-01 17:00 (+2d) | 2018-10-31 09:00 → 2018-11-01 18:00 (+1d) |  |  |  |
| 48 | 解决业务需求冲突 |  |  |  |  | resources 刘向辉 → 左文正 |
| 49 | **识别用户群** |  | 2018-11-01 14:00 → 2018-11-08 19:00 (+7d) | 16h → 26h |  |  |
| 50 | 用户分类 | 2018-10-31 08:00 → 2018-11-01 17:00 (+1d) | 2018-10-31 09:00 → 2018-11-01 18:00 (+1d) |  |  |  |
| 52 | 小组第七次会议 |  |  |  | none → 36FS+13h |  |
| 53 | 第七次会议记录 | 2018-11-02 17:00 → 2018-11-02 16:00 | 2018-11-02 17:30 → 2018-11-02 16:30 |  | none → 52FS-1h |  |
| 54 | uml基础2PPT | 2018-11-04 08:00 → 2018-11-03 10:00 (-1d) | 2018-11-04 15:00 → 2018-11-03 17:00 (-1d) |  | none → 52FS+2h |  |
| 55 | 组织焦点小组 | 2018-11-02 08:00 → 2018-11-03 17:00 (+1d) | 2018-11-02 11:00 → 2018-11-04 18:00 (+2d) |  |  | resources 刘向辉 → 刘向辉 [50%]; 左文正 [50%] |
| 59 | 观察用户如何完成工作 | 2018-11-03 17:00 → 2018-11-03 19:00 | 2018-11-04 09:00 → 2018-11-04 20:00 |  | none → 56 |  |
| 62 | 检查用户问题报告 | 2018-11-07 08:00 → 2018-11-07 17:00 | 2018-11-07 09:00 → 2018-11-07 20:00 | 1h → 2h | none → 57FS+7h | was named 检查问题报告 |
| 63 | 完善已有的需求 |  | 2018-11-07 10:00 → 2018-11-07 09:00 | 2h → 1h |  | resources 陈祥斌 → 左文正 |
| 65 | 学生用户代表访谈 | 2018-11-08 08:00 → 2018-11-08 17:00 | 2018-11-08 10:00 → 2018-11-08 20:00 |  | none → 63FS+2h |  |
| 66 | 游客用户代表访谈 | 2018-11-08 08:00 → 2018-11-08 17:00 | 2018-11-08 09:00 → 2018-11-08 18:00 |  | none → 63FS+2h |  |
| 67 | 教师用户代表访谈 | 2018-11-08 08:00 → 2018-11-08 17:00 | 2018-11-08 09:00 → 2018-11-08 20:00 | 1h → 2h | none → 63FS+2h |  |
| 68 | 管理员用户代表访谈 | 2018-11-08 08:00 → 2018-11-08 17:00 | 2018-11-08 09:00 → 2018-11-08 18:00 |  | none → 63FS+2h |  |
| 70 | 小组第八次会议 | 2018-11-09 08:00 → 2018-11-09 17:00 | 2018-11-09 09:00 → 2018-11-09 18:00 |  | none → 52FS+12h |  |
| 71 | 第八次会议记录 | 2018-11-09 17:00 → 2018-11-09 16:00 | 2018-11-09 17:30 → 2018-11-09 16:30 |  | none → 70FS-1h |  |
| 75 | 需求工程计划-修改 | 2018-11-10 08:00 → 2018-11-10 17:00 | 2018-11-10 09:00 → 2018-11-10 20:00 | 1h → 2h | none → 38FS+26h | resources 左文正 → 左文正 [50%]; 陈祥斌 [50%] |
| 82 | 将需求分配到子系统 |  |  |  |  | resources 左文正 [40%]; 陈祥斌 [30%]; 刘向辉 [30%] → 陈祥斌 [30%]; 刘向辉 [30%]; 王安栋 [40%] |
| 84 | 小组第九次会议 | 2018-11-16 08:00 → 2018-11-16 17:00 | 2018-11-16 09:00 → 2018-11-16 18:00 |  | none → 70FS+13h |  |
| 85 | 第九次会议记录 | 2018-11-16 17:00 → 2018-11-16 16:00 | 2018-11-16 17:30 → 2018-11-16 16:30 |  | none → 84FS-1h |  |
| 92 | 小组第十次会议 | 2018-11-23 08:00 → 2018-11-23 17:00 | 2018-11-23 09:00 → 2018-11-23 18:00 |  | none → 84FS+13h |  |
| 93 | 第十次会议记录 | 2018-11-23 17:00 → 2018-11-23 16:00 | 2018-11-23 17:30 → 2018-11-23 16:30 |  | none → 92FS-1h |  |
| 95 | 评审需求 |  | 2018-11-29 16:00 → 2018-11-29 12:00 | 7h → 4h |  |  |
| 97 | 小组第十一次会议 | 2018-11-30 08:00 → 2018-11-30 17:00 | 2018-11-30 09:00 → 2018-11-30 18:00 |  | none → 92FS+13h |  |
| 98 | 第十一次会议记录 | 2018-11-30 17:00 → 2018-11-30 16:00 | 2018-11-30 17:30 → 2018-11-30 16:30 |  | none → 97FS-1h |  |
| 101 | 软件需求规格说明书 |  | 2018-12-02 09:00 → 2018-12-02 10:00 | 1h → 2h |  |  |
| 102 | 软件需求规格说明书修改 | 2018-12-06 08:00 → 2018-12-06 17:00 | 2018-12-06 10:00 → 2018-12-06 20:00 |  | none → 101FS+8h |  |
| 103 | 小组第十二次会议 | 2018-12-07 08:00 → 2018-12-07 17:00 | 2018-12-07 09:00 → 2018-12-07 18:00 |  | none → 97FS+13h |  |
| 104 | 第十二次会议记录 | 2018-11-07 17:00 → 2018-12-07 16:00 (+30d) | 2018-11-07 17:30 → 2018-12-07 16:30 (+30d) |  | none → 103FS-1h |  |
| 105 | **需求管理** |  | 2018-12-23 19:00 → 2018-12-24 19:00 (+1d) | 34h → 36h |  |  |
| 109 | 小组第十三次会议 | 2018-12-14 08:00 → 2018-12-14 17:00 | 2018-12-14 09:00 → 2018-12-14 18:00 |  | none → 103FS+13h |  |
| 110 | 第十三次会议记录 | 2018-12-14 17:00 → 2018-12-14 16:00 | 2018-12-14 19:00 → 2018-12-14 18:00 |  | none → 109FS-1h |  |
| 114 | 软件需求变更文档 |  | 2018-12-20 09:00 → 2018-12-20 10:00 | 1h → 2h |  |  |
| 115 | 小组第十四次会议 | 2018-12-21 08:00 → 2018-12-21 17:00 | 2018-12-21 09:00 → 2018-12-21 18:00 |  | none → 109FS+13h |  |
| 116 | 第十四次会议记录 | 2018-12-21 17:00 → 2018-12-21 16:00 | 2018-12-21 17:30 → 2018-12-21 16:30 |  | none → 115FS-1h |  |
| 117 | 软件需求变更文档修改 | 2018-12-22 17:00 → 2018-12-22 19:00 | 2018-12-23 19:00 → 2018-12-23 20:00 |  | none → 114FS+5h |  |
| 119 | 方案选择及前期文档的整理 |  | 2018-12-26 09:00 → 2018-12-26 10:00 | 1h → 2h |  | was named 方案选择 |

| ID | Task | Start | Finish | Predecessors |
| --- | --- | --- | --- | --- |
| 122 | 小组第十五次会议 | 2018-12-28 08:00 → 2018-12-28 17:00 | 2018-12-28 09:00 → 2018-12-28 18:00 | none → 115FS+13h |
| 123 | 第十五次会议记录 | 2018-12-28 17:00 → 2018-12-28 16:00 | 2018-12-28 19:00 → 2018-12-28 18:00 | none → 122FS-1h |
| 127 | 软件概要设计说明--修改 |  |  | none → 126 |
| 130 | 小组第十六次会议 | 2019-01-04 08:00 → 2019-01-04 17:00 | 2019-01-04 09:00 → 2019-01-04 18:00 | none → 122FS+13h |
| 131 | 第十六次会议记录 | 2019-01-04 17:00 → 2019-01-04 16:00 | 2019-01-04 17:30 → 2019-01-04 16:30 | none → 130FS-1h |
| 132 | 项目修改 | 2019-01-05 17:00 → 2019-01-05 19:00 | 2019-01-10 19:00 → 2019-01-10 20:00 | none → 129FS+2h |
| 133 | 小组第十七次会议 | 2019-01-11 08:00 → 2019-01-11 17:00 | 2019-01-11 09:00 → 2019-01-11 18:00 | none → 130FS+13h |
| 134 | 第十七次会议记录 | 2019-01-11 17:00 → 2019-01-11 16:00 | 2019-01-11 17:30 → 2019-01-11 16:30 | none → 133FS-1h |

## Version 6 (saved 2018-11-06, file 甘特图1.5V.mpp)

Last finish stays 2019-01-14. Complete tasks 0 → 31.

Added:

| ID | Task | Duration | Start | Finish | Predecessors | Resources |
| --- | --- | --- | --- | --- | --- | --- |
| 33 | 需求工程项目计划0.3 | 2h | 2018-10-22 17:00 | 2018-10-22 19:00 |  | 刘向辉 |
| 42 | 甘特图1.4 | 1.5h | 2018-10-28 15:00 | 2018-10-28 16:30 | 39FS+4h | 王安栋 |
| 46 | 经济可行性报告0.3 | 1d | 2018-11-01 17:00 | 2018-11-01 19:00 |  | 涂弘森 |
| 47 | 需求工程项目报告1.1 | 1d | 2018-11-01 17:00 | 2018-11-01 19:00 |  | 刘向辉 |
| 48 | uml基础1ppt完善 | 2h | 2018-11-02 17:00 | 2018-11-03 10:00 | 41FS+14h | 陈祥斌; 左文正 |
| 50 | 甘特图1.5 | 1h | 2018-11-06 17:00 | 2018-11-06 18:00 | 42FS+12h | 王安栋 |
| 51 | uml基础2PPT修改0.2 | 2h | 2018-11-08 17:00 | 2018-11-09 10:00 | 49FS+8h | 涂弘森 |
| 62 | app模型设计 | 1h | 2018-11-11 08:00 | 2018-11-11 09:00 |  | 刘向辉 [50%]; 涂弘森 [50%] |

Removed: 25 甘特图完善V1.0; 32 需求工程计划-初步; 44 建立业务需求; 45 定义产品愿景和项目范围; 46 建立业务目标模型; 47 干系人评审模型; 48 解决业务需求冲突; 49 识别用户群; 50 用户分类; 51 识别用户类别; 55 组织焦点小组; 56 识别用户需求; 57 分发问卷调查; 58 识别系统事件和响应; 59 观察用户如何完成工作; 60 举办需求获取访谈; 61 组内举行需求获取讨论会

Changed:

| ID | Task | Start | Finish | Duration | Complete | Predecessors | Other |
| --- | --- | --- | --- | --- | --- | --- | --- |
| 1 | **软件工程系列课程教学辅助网站** | 2018-09-19 08:00 A |  |  | 0% → 30% |  |  |
| 2 | **项目前期准备** |  |  |  | 0% → 100% |  |  |
| 3 | **项目范围选定** | 2018-09-21 17:00 A |  |  | 0% → 100% |  |  |
| 4 | 小组第一次会议（讨论项目选题和后期分配资源） | 2018-09-21 17:00 A | 2018-09-21 20:00 A |  | 0% → 100% |  |  |
| 5 | 资源配置 | 2018-09-22 17:00 A | 2018-09-23 20:00 A |  | 0% → 100% |  |  |
| 6 | logo设计 | 2018-09-22 17:00 A | 2018-09-22 20:00 A |  | 0% → 100% |  |  |
| 7 | **可行性分析** |  |  |  | 0% → 100% |  |  |
| 8 | 小组第三次会议 | 2018-10-12 19:00 A | 2018-10-12 20:00 A |  | 0% → 100% |  |  |
| 9 | 第三次会议记录 | 2018-10-12 16:00 A | 2018-10-12 16:30 A |  | 0% → 100% |  |  |
| 10 | 方案设计 | 2018-10-12 19:00 A | 2018-10-13 18:00 A |  | 0% → 100% |  |  |
| 11 | 可行性分析报告V0.1 | 2018-10-13 17:00 A | 2018-10-13 20:00 A |  | 0% → 100% |  |  |
| 12 | **项目计划** | 2018-09-27 17:00 A | 2018-10-21 19:00 → 2018-10-23 19:00 (+2d) | 49h → 53h | 0% → 95% |  |  |
| 13 | 小组第二次会议 | 2018-09-27 17:00 A | 2018-09-27 18:00 A |  | 0% → 100% |  |  |
| 14 | 第二次会议记录 | 2018-09-28 08:00 A | 2018-09-28 08:30 A |  | 0% → 100% |  |  |
| 15 | 甘特图绘制V0.1 | 2018-09-27 19:00 A | 2018-09-29 18:00 A |  | 0% → 100% |  |  |
| 16 | WBS绘制 | 2018-09-29 17:00 A | 2018-09-29 20:00 A |  | 0% → 100% |  |  |
| 17 | OBS绘制 | 2018-09-29 17:00 A | 2018-09-29 18:00 A |  | 0% → 100% |  |  |
| 18 | 需求项目计划V0.1 | 2018-09-30 17:00 A | 2018-09-30 20:00 A |  | 0% → 100% |  |  |
| 19 | 需求项目计划PPT制作 | 2018-09-30 17:00 A | 2018-09-30 20:00 A |  | 0% → 100% |  |  |
| 20 | uml概述PPT | 2018-10-12 17:00 A | 2018-10-13 18:00 A |  | 0% → 100% |  |  |
| 21 | 甘特图完善V0.2 | 2018-10-13 17:00 A | 2018-10-13 20:00 A |  | 0% → 100% |  |  |
| 22 | 需求工程项目计划V0.2 | 2018-10-12 17:00 A | 2018-10-12 20:00 A |  | 0% → 100% |  | was named 需求项目计划完善V0.2 |
| 23 | 小组第四次会议 | 2018-10-17 19:00 A | 2018-10-17 20:00 A |  | 0% → 100% |  |  |
| 24 | 第四次会议记录 | 2018-10-18 08:00 A | 2018-10-18 08:30 A |  | 0% → 100% |  |  |
| 25 | 需求项目计划完善V1.0 | 2018-10-17 19:00 A | 2018-10-18 18:00 A |  | 0% → 100% |  |  |
| 26 | WBS、OBS修改0.2 | 2018-10-18 17:00 A | 2018-10-19 18:00 A |  | 0% → 100% |  | was named WBS、OBS修改 |
| 27 | 甘特图完善1.1 | 2018-10-18 17:00 A | 2018-10-19 17:30 A |  | 0% → 100% | 甘特图完善V1.0FS-1h → 22FS+10h |  |
| 28 | 小组第五次会议 | 2018-10-19 17:00 A | 2018-10-19 18:00 A |  | 0% → 100% |  |  |
| 29 | uml工具PPT | 2018-10-20 08:00 A | 2018-10-20 15:00 A |  | 0% → 100% |  |  |
| 30 | 项目章程 | 2018-10-20 17:00 A | 2018-10-21 18:00 A |  | 0% → 100% |  |  |
| 31 | 项目总体计划 | 2018-10-20 19:00 A | 2018-10-21 17:30 A |  | 0% → 100% |  |  |
| 32 | 甘特图完善1.2 | 2018-10-20 17:30 A | 2018-10-20 20:00 A |  | 0% → 100% |  |  |
| 34 | **需求工程** |  | 2018-12-28 20:00 → 2018-12-28 19:00 | 128h → 127h | 0% → 12% |  |  |
| 35 | 小组第六次会议 | 2018-10-26 19:00 A | 2018-10-26 20:00 A |  | 0% → 100% |  |  |
| 36 | 第六次会议记录 | 2018-10-26 16:00 A | 2018-10-26 16:30 A |  | 0% → 100% |  |  |
| 37 | 需求工程项目报告1.0和需求项目答辩ppt | 2018-10-28 08:00 A | 2018-10-28 11:30 → 2018-10-28 11:00 A | 3.5h → 3h | 0% → 100% |  | was named 需求项目计划书修订和需求项目答辩ppt |
| 38 | QA计划 | 2018-10-27 17:00 A |  |  | 0% → 75% |  |  |
| 39 | 甘特图完善1.3 | 2018-10-27 17:00 A | 2018-10-28 11:00 → 2018-10-28 10:00 | 3h → 2h | 0% → 75% |  |  |
| 40 | uml工具PPT修改 | 2018-10-28 17:00 → 2018-10-27 17:00 A (-1d) | 2018-10-28 19:00 → 2018-10-28 10:00 |  | 0% → 75% |  |  |
| 41 | uml基础1ppt | 2018-10-27 17:00 A | 2018-10-28 15:00 A |  | 0% → 100% |  |  |
| 44 | 小组第七次会议 | 2018-11-02 19:00 → 2018-10-31 17:00 (-2d) | 2018-11-02 20:00 → 2018-10-31 18:00 (-2d) |  |  | 35FS+13h → 35FS+8h |  |
| 45 | 第七次会议记录 | 2018-11-02 16:00 → 2018-10-31 17:00 (-2d) | 2018-11-02 16:30 → 2018-11-01 08:30 (-1d) |  |  |  |  |
| 49 | uml基础2PPT0.1 | 2018-11-03 10:00 → 2018-11-03 17:00 | 2018-11-03 17:00 → 2018-11-04 14:00 (+1d) | 6h → 5h |  |  | was named uml基础2PPT; resources 刘向辉 [50%]; 涂弘森 [50%] → 涂弘森 [20%]; 左文正 [20%]; 陈祥斌 [20%]; 刘向辉 [20%]; 王安栋 [20%] |
| 52 | 检查用户问题报告 |  |  |  |  | 分发问卷调查FS+7h → none |  |
| 65 | 分析可实现性 |  | 2018-11-10 09:00 → 2018-11-10 09:30 | 1h → 1.5h |  |  |  |
| 78 | 识别需求源头 |  | 2018-11-19 09:00 → 2018-11-19 10:00 | 1h → 2h |  |  |  |
| 99 | 分析变更影响 |  | 2018-12-13 18:00 → 2018-12-13 17:30 | 3h → 2.5h |  |  |  |
| 103 | 跟踪需求状态 |  | 2018-12-16 09:00 → 2018-12-16 08:30 | 3h → 2.5h |  |  |  |
| 114 | 第十五次会议记录 |  | 2018-12-28 18:00 → 2018-12-28 16:30 | 1d → 0.5h |  |  |  |
