# 甘特图1.2V

How a schedule from MS Project changed from version to version. A marks actual dates.

## Version 1 (saved 2019-01-08)

| ID | WBS | Task | Duration | Start | Finish | Predecessors | Complete | Constraint |
| --- | --- | --- | --- | --- | --- | --- | --- | --- |
| 1 | 1 | **软件工程系列课程教学辅助网站** | 253h | 2018-09-19 08:00 A | 2019-01-16 14:00 |  | 83% |  |
| 2 | 1.1 | **项目前期准备** | 34h | 2018-09-19 08:00 | 2018-09-30 21:00 |  | 100% |  |
| 3 |  | 小组第一次会议（讨论项目选题和后期分配资源） | 2h | 2018-09-21 17:00 A | 2018-09-21 20:00 A |  | 100% |  |
| 4 |  | 资源配置 | 4h | 2018-09-22 17:00 A | 2018-09-23 20:00 A | 3 | 100% | start no earlier than 2018-09-22 17:00 |
| 5 |  | logo设计 | 2h | 2018-09-22 17:00 A | 2018-09-22 20:00 A | 3 | 100% |  |
| 6 | 1.2 | **项目计划** | 97h | 2018-09-27 17:00 A | 2018-11-21 19:00 | 2 | 96% |  |
| 7 |  | 小组第二次会议 | 1h | 2018-09-27 17:00 A | 2018-09-27 18:00 A | 3FS+10h | 100% |  |
| 8 |  | 第二次会议记录 | 0.5h | 2018-09-28 08:00 A | 2018-09-28 08:30 A | 7 | 100% |  |
| 9 |  | 甘特图绘制V0.1 | 4h | 2018-09-27 19:00 A | 2018-09-29 18:00 A | 7 | 100% |  |
| 10 |  | WBS绘制 | 2h | 2018-09-29 17:00 A | 2018-09-29 20:00 A | 7FS+3h | 100% |  |
| 11 |  | OBS绘制 | 1h | 2018-09-29 17:00 A | 2018-09-29 18:00 A | 7FS+3h | 100% |  |
| 12 |  | 需求项目计划V0.1 | 5h | 2018-09-30 17:00 A | 2018-10-09 18:00 | 7FS+5h | 40% |  |
| 13 |  | 需求项目计划PPT制作0.1 | 1h | 2018-09-30 17:00 A | 2018-09-30 18:00 A | 12FS-2h | 100% |  |
| 14 |  | 小组第三次会议 | 1h | 2018-10-12 19:00 A | 2018-10-12 20:00 A | 7FS+30h | 100% |  |
| 15 |  | 第三次会议记录 | 0.5h | 2018-10-12 16:00 A | 2018-10-12 16:30 A | 14SS-1h | 100% |  |
| 16 |  | 方案设计（模板） | 2h | 2018-10-12 19:00 A | 2018-10-13 18:00 A | 14FS-1h | 100% |  |
| 17 |  | 可行性分析报告V0.1 | 2h | 2018-10-13 17:00 A | 2018-10-13 20:00 A | 14 | 100% |  |
| 18 |  | 甘特图完善V0.2 | 2h | 2018-10-13 17:00 A | 2018-10-13 20:00 A | 9FS+27h | 100% |  |
| 19 |  | 需求工程项目计划V0.2 | 2h | 2018-10-13 17:00 A | 2018-10-13 20:00 A | 12FS+22h | 100% |  |
| 20 |  | 小组第四次会议 | 1h | 2018-10-17 19:00 A | 2018-10-17 20:00 A | 14FS+9h | 100% |  |
| 21 |  | 第四次会议记录 | 0.5h | 2018-10-18 08:00 A | 2018-10-18 08:30 A | 20 | 100% |  |
| 22 |  | 需求项目计划完善V1.0 | 2h | 2018-10-17 19:00 A | 2018-10-18 18:00 A | 19FS+9h | 100% |  |
| 23 |  | WBS、OBS修改0.2 | 3h | 2018-10-18 17:00 A | 2018-10-19 18:00 A | 10FS+36h | 100% |  |
| 24 |  | 甘特图完善1.1 | 2.5h | 2018-10-18 17:00 A | 2018-10-19 17:30 A | 19FS+10h | 100% |  |
| 25 |  | 小组第五次会议 | 1h | 2018-10-19 17:00 A | 2018-10-19 18:00 A | 20FS+2h | 100% |  |
| 26 |  | 第五次会议记录 | 0.5h | 2018-10-19 16:00 A | 2018-10-19 16:30 A | 25FS-1h | 100% |  |
| 27 |  | 项目章程 | 3h | 2018-10-20 17:00 A | 2018-10-21 18:00 A | 25FS+1h | 100% |  |
| 28 |  | 项目总体计划 | 1.5h | 2018-10-20 19:00 A | 2018-10-21 17:30 A | 25FS+2h | 100% |  |
| 29 |  | 甘特图完善1.2 | 1.5h | 2018-10-20 17:30 A | 2018-10-20 20:00 A | 24FS+2h | 100% |  |
| 30 |  | 需求工程项目计划—初步0.3 | 2h | 2018-10-21 17:00 A | 2018-10-21 19:00 A | 19FS+50h | 100% |  |
| 31 |  | 小组第六次会议 | 1h | 2018-10-26 19:00 A | 2018-10-26 20:00 A | 25FS+14h | 100% |  |
| 32 |  | 第六次会议记录 | 0.5h | 2018-10-26 16:00 A | 2018-10-26 16:30 A | 31FS-1h | 100% |  |
| 33 |  | 需求工程项目报告1.0和需求项目答辩ppt0.2 | 3h | 2018-10-28 08:00 A | 2018-10-28 11:00 A | 30 | 100% |  |
| 34 |  | QA计划 | 4h | 2018-10-27 17:00 A | 2018-10-28 12:00 A | 31FS+4h | 100% |  |
| 35 |  | 甘特图完善1.3 | 2h | 2018-10-27 17:00 A | 2018-10-28 10:00 A | 29FS+30h | 100% |  |
| 36 |  | 甘特图1.4 | 1.5h | 2018-10-28 15:00 A | 2018-10-28 16:30 A | 35FS+4h | 100% |  |
| 37 |  | 小组第七次会议 | 1h | 2018-10-31 17:00 A | 2018-10-31 18:00 A | 31FS+8h | 100% |  |
| 38 |  | 第七次会议记录 | 0.5h | 2018-10-31 17:00 A | 2018-11-01 08:30 A | 37FS-1h | 100% |  |
| 39 |  | 经济可行性报告0.2 | 1d | 2018-11-01 17:00 A | 2018-11-01 19:00 A | 17 | 100% |  |
| 40 |  | 需求工程项目报告1.1 | 1d | 2018-10-29 14:00 A | 2018-10-29 16:00 A | 33FS+10h | 100% |  |
| 41 |  | 甘特图1.5 | 1h | 2018-11-06 17:00 A | 2018-11-06 18:00 A | 36FS+12h | 100% |  |
| 42 |  | 第八次会议 | 2h | 2018-11-09 17:00 A | 2018-11-09 19:00 A | 37FS+14h | 100% |  |
| 43 |  | 第八次会议记录 | 0.5h | 2018-11-09 17:00 A | 2018-11-09 17:30 A | 42FS-1h | 100% |  |
| 44 |  | 需求工程项目报告1.2引言-需求工程计划（1-6） | 2h | 2018-11-10 17:00 A | 2018-11-10 19:00 A | 40FS+18h | 100% |  |
| 45 |  | 需求工程项目报告1.2质量管理计划、沟通管理计划（7-8） | 1d | 2018-11-10 17:00 A | 2018-11-10 19:00 A | 40FS+18h | 100% |  |
| 46 |  | 需求工程项目报告1.2成本管理计划、项目范围计划（9-10） | 1d | 2018-11-10 17:00 A | 2018-11-10 19:00 A | 40FS+18h | 100% |  |
| 47 |  | 需求工程项目报告1.2配置管理计划、项目时间计划（11-12） | 1d | 2018-11-10 17:00 A | 2018-11-10 19:00 A | 40FS+18h | 100% |  |
| 48 |  | 需求工程项目报告1.2人力资源计划、风险管理计划（13-14） | 1d | 2018-11-01 09:00 A | 2018-11-01 11:00 A | 40FS+18h | 100% |  |
| 49 |  | 第九次会议 | 2h | 2018-11-16 17:00 A | 2018-11-16 19:00 A | 42FS+14h | 100% |  |
| 50 |  | 第九次会议记录 | 0.5h | 2018-11-16 17:00 A | 2018-11-16 17:30 A | 49FS-1h | 100% |  |
| 51 |  | 需求工程项目报告1.3 | 2h | 2018-11-18 08:00 A | 2018-11-18 10:00 A | 48FS+133h | 100% |  |
| 52 |  | 需求工程项目答辩PPT0.3 | 2h | 2018-11-18 15:00 A | 2018-11-18 17:00 A | 51FS-2h | 100% |  |
| 53 |  | 甘特图1.6 | 3h | 2018-11-21 17:00 A | 2018-11-22 11:00 A | 41 | 100% |  |
| 54 | 1.3 | **项目工程** | 73h | 2018-11-19 17:00 | 2018-12-25 19:00 | 6 | 100% |  |
| 55 | 1.3.1 | **需求获取** | 67h | 2018-11-22 17:00 | 2018-12-25 19:00 |  | 100% |  |
| 56 | 1.3.1.1 | **项目下达者需求访谈** | 100d | 2018-11-22 17:00 A | 2018-12-17 18:00 A |  | 100% |  |
| 57 |  | 项目下达者需求第1次访谈 | 1h | 2018-11-22 17:00 A | 2018-11-22 18:00 A |  | 100% |  |
| 58 |  | 项目下达者需求第2次访谈 | 1h | 2018-12-11 17:00 A | 2018-12-11 18:00 A | 57 | 100% |  |
| 59 |  | 项目下达者需求第3次访谈 | 1h | 2018-12-17 17:00 A | 2018-12-17 18:00 A | 58 | 100% |  |
| 60 |  | 小组第十次会议 | 1h | 2018-11-23 16:00 A | 2018-11-23 17:00 A | 51FS+45h | 100% |  |
| 61 |  | 第十次会议记录 | 0.5h | 2018-11-23 16:00 A | 2018-11-23 16:30 A | 60FS-1h | 100% |  |
| 62 |  | 需求愿景 | 2h | 2018-11-23 08:00 A | 2018-11-23 10:00 A | 57 | 100% |  |
| 63 |  | 关联图 | 2h | 2018-11-24 08:00 A | 2018-11-24 10:00 A | 60 | 100% |  |
| 64 |  | 生态系统图 | 2h | 2018-11-24 17:00 A | 2018-11-24 20:00 A | 60FS+2h | 100% |  |
| 65 |  | 鱼骨图 | 2h | 2018-11-24 10:00 A | 2018-11-24 12:00 A | 60FS+2h | 100% |  |
| 66 |  | web界面原型0.1 | 2h | 2018-11-13 17:00 A | 2018-11-13 19:00 A | 62 | 100% |  |
| 67 |  | web界面原型0.2 | 2h | 2018-11-14 17:00 A | 2018-11-14 19:00 A | 66 | 100% |  |
| 68 |  | web界面原型0.3 | 2h | 2018-11-23 08:00 A | 2018-11-23 10:00 A | 67 | 100% |  |
| 69 |  | web界面原型0.4 | 2h | 2018-11-16 17:00 A | 2018-11-16 19:00 A | 68 | 100% |  |
| 70 |  | web界面原型0.5 | 2h | 2018-11-17 17:00 A | 2018-11-17 19:00 A | 69 | 100% |  |

| ID | WBS | Task | Duration | Start | Finish | Predecessors | Complete | Total float |
| --- | --- | --- | --- | --- | --- | --- | --- | --- |
| 71 |  | web界面原型初步 | 2h | 2018-11-18 17:00 A | 2018-11-18 19:00 A | 70 | 100% |  |
| 72 |  | APP界面原型初步 | 5h | 2018-11-24 13:00 A | 2018-11-25 09:00 A | 63 | 100% |  |
| 73 |  | 小组第十一次会议 | 1h | 2018-11-30 10:00 A | 2018-11-30 11:00 A | 60FS+50h | 100% |  |
| 74 |  | 第十一次会议记录 | 0.5h | 2018-11-30 10:00 A | 2018-11-30 10:30 A | 73FS-1h | 100% |  |
| 75 |  | 游客用户代表访谈 | 1h | 2018-12-30 17:00 A | 2018-12-30 18:00 A |  | 100% |  |
| 76 |  | 学生用户代表访谈 | 1h | 2018-12-30 17:00 A | 2018-12-30 18:00 A |  | 100% |  |
| 77 |  | 管理员用户第一次访谈 | 1h | 2018-12-16 17:00 A | 2018-12-16 19:00 |  | 100% |  |
| 78 |  | 教师用户代表访谈 | 1h | 2018-12-21 17:00 A | 2018-12-21 18:00 A |  | 100% |  |
| 79 | 1.3.2 | **需求分析** | 21h | 2018-11-24 17:00 | 2018-12-04 19:00 | 55 | 100% |  |
| 80 |  | 需求愿景0.2 | 1d | 2018-12-10 17:00 A | 2018-12-10 19:00 A |  | 100% |  |
| 81 |  | 设计流程图 | 4h | 2018-12-20 17:00 A | 2018-12-21 20:00 A | 60FS+5h | 100% |  |
| 82 |  | 分析可实现性 | 1.5h | 2018-12-21 17:00 A | 2018-12-21 19:30 A | 60FS+7h | 100% |  |
| 83 |  | 排列需求优先级 | 1h | 2018-12-23 17:00 A | 2018-12-23 18:00 A | 60FS+8h | 100% |  |
| 84 |  | 创建数据字典和ER图 | 4h | 2018-12-23 17:00 A | 2018-12-24 20:00 A | 73 | 100% |  |
| 85 |  | 需求分析计划 | 4h | 2018-12-20 17:00 A | 2018-12-21 20:00 A | 84 | 100% |  |
| 86 |  | 分析接口 | 2h | 2018-12-20 17:00 A | 2018-12-20 20:00 A | 73FS+4h | 100% |  |
| 87 |  | 将需求分配到子系统 | 1h | 2018-12-20 17:00 A | 2018-12-20 18:00 A | 73FS+4h | 100% |  |
| 88 | 1.3.3 | **需求验证** | 41h | 2018-12-03 17:00 | 2018-12-23 19:00 | 79 | 100% |  |
| 89 |  | 管理员用户第二次访谈 | 1h | 2018-12-23 08:00 A | 2018-12-23 09:00 A | 77 | 100% |  |
| 90 |  | 小组第十二次会议 | 1h | 2018-12-07 17:00 A | 2018-12-07 18:00 A | 73FS+14h | 100% |  |
| 91 |  | 第十二次会议记录 | 0.5h | 2018-12-07 17:00 A | 2018-12-07 17:30 A | 90FS-1h | 100% |  |
| 92 |  | app界面原型修改 | 4h | 2018-12-09 08:00 A | 2018-12-09 12:00 A | 72 | 100% |  |
| 93 |  | web界面原型修改 | 4h | 2018-12-09 08:00 A | 2018-12-09 12:00 A | 71 | 100% |  |
| 94 |  | 小组第十三次会议 | 1h | 2018-12-14 19:00 A | 2018-12-14 20:00 A | 90FS+14h | 100% |  |
| 95 |  | 第十三次会议记录 | 0.5h | 2018-12-14 16:00 A | 2018-12-14 16:30 A | 94FS-1h | 100% |  |
| 96 |  | 用户手册上半部分 | 3h | 2018-12-22 17:00 A | 2018-12-23 11:00 A |  | 100% |  |
| 97 |  | 用户手册下半部分 | 2h | 2018-12-23 17:00 A | 2018-12-23 19:00 A |  | 100% |  |
| 98 |  | 测试用例 | 5h | 2018-12-23 08:00 A | 2018-12-23 14:00 A |  | 100% |  |
| 99 |  | 用例文档 | 5h | 2018-12-23 08:00 A | 2018-12-23 14:00 A |  | 100% |  |
| 100 |  | 第十四次会议记录 | 0.5h | 2018-12-21 16:00 A | 2018-12-21 16:30 A | 95 | 100% |  |
| 101 |  | 小组第十四次会议 | 1h | 2018-12-21 19:00 A | 2018-12-21 20:00 A | 94FS+13h | 100% |  |
| 102 |  | 软件需求规格说明书（SRS） | 8h | 2018-12-21 17:00 A | 2018-12-24 20:00 A | 96, 98, 99, 84 | 100% |  |
| 103 |  | 软件需求规格说明书修改 | 3h | 2018-12-22 17:00 A | 2018-12-23 18:00 A | 102 | 100% |  |
| 104 |  | 甘特图1.7 | 1d | 2018-12-25 17:00 A | 2018-12-25 19:00 A | 53 | 100% |  |
| 105 |  | SRSppt | 2h | 2018-12-30 17:00 A | 2018-12-30 19:00 A | 103 | 100% |  |
| 106 | 1.4 | **项目控制** | 41h | 2018-12-09 17:00 | 2018-12-29 18:00 | 54 | 78% |  |
| 107 |  | 第一次项目请求变更 | 2h | 2018-12-12 17:00 A | 2018-12-12 19:00 A |  | 100% |  |
| 108 |  | 第二次项目请求变更 | 1d | 2019-01-06 17:00 A | 2019-01-06 19:00 A |  | 100% |  |
| 109 |  | 小组第十五次会议 | 1h | 2018-12-28 19:00 A | 2018-12-28 20:00 A | 101FS+13h | 100% |  |
| 110 |  | 第十五次会议记录 | 0.5h | 2018-12-28 16:00 A | 2018-12-28 16:30 A | 109FS-1h | 100% |  |
| 111 |  | 数据库设计 | 2h | 2018-12-29 17:00 A | 2018-12-29 20:00 A | 84 | 100% |  |
| 112 |  | 系统设计与实现计划 | 3h | 2018-12-29 08:00 A | 2018-12-29 11:00 A | 84, 111 | 100% |  |
| 113 |  | jad会议 | 1h | 2019-01-03 17:00 A | 2019-01-03 18:00 A | 77, 89, 75, 76, 78 | 100% |  |
| 114 |  | 管理员需求评分表 | 1d | 2019-01-03 17:00 A | 2019-01-03 19:00 A | 113 | 100% |  |
| 115 |  | 学生需求评分表 | 1d | 2019-01-03 17:00 A | 2019-01-03 19:00 A | 113 | 100% |  |
| 116 |  | 教师需求评分表 | 1d | 2019-01-04 17:00 A | 2019-01-04 19:00 A | 113 | 100% |  |
| 117 |  | 游客需求评分表 | 1d | 2019-01-04 17:00 A | 2019-01-04 19:00 A | 113 | 100% |  |
| 118 |  | 第十六次会议记录 | 0.5h | 2019-01-04 16:00 A | 2019-01-04 16:30 A | 110 | 100% |  |
| 119 |  | 小组第十六次会议 | 1h | 2019-01-04 19:00 A | 2019-01-04 20:00 A | 109FS+13h | 100% |  |
| 120 |  | SRS修改 | 2h | 2019-01-05 17:00 A | 2019-01-05 19:00 A | 114, 115, 116, 117 | 100% |  |
| 121 |  | 变更申请报告 | 1d | 2019-01-06 17:00 A | 2019-01-06 19:00 A | 108 | 100% |  |
| 122 |  | CCB章程 | 1d | 2019-01-07 17:00 A | 2019-01-07 19:00 A | 108 | 100% |  |
| 123 |  | 软件需求变更文档 | 2h | 2019-01-07 17:00 A | 2019-01-07 20:00 A | 108 | 100% |  |
| 124 |  | 用户手册修改 | 3h | 2019-01-08 08:00 A | 2019-01-08 11:00 A | 108 | 100% |  |
| 125 |  | web界面修改 | 2h | 2019-01-08 08:00 A | 2019-01-08 10:00 A | 108 | 100% |  |
| 126 |  | 测试用例、数据字典修改 | 2h | 2019-01-08 17:00 A | 2019-01-08 19:00 A | 108 | 100% |  |
| 127 |  | 文档整理 | 2h | 2019-01-09 08:00 A | 2019-01-09 10:00 A | 121, 122, 123, 124, 125, 126 | 100% |  |
| 128 |  | 软件需求变更文档修改 | 3h | 2019-01-10 19:00 | 2019-01-11 20:00 | 123FS+5h |  | -11d |
| 129 |  | 软件概要设计说明--初步 | 4h | 2018-12-27 17:00 | 2018-12-28 20:00 | 111SF, 112SF |  |  |
| 130 |  | 软件概要设计说明--修改 | 4h | 2018-12-29 17:00 | 2018-12-30 10:00 | 129 |  |  |
| 131 | 1.5 | **项目收尾** | 28h | 2019-01-01 17:00 | 2019-01-13 19:00 | 106 |  |  |
| 132 |  | 项目检验 | 7h | 2019-01-01 17:00 | 2019-01-04 18:00 | 119FS-1h |  |  |
| 133 |  | 项目修改 | 11h | 2019-01-05 19:00 | 2019-01-10 20:00 | 132FS+2h |  |  |
| 134 |  | 小组第十七次会议 | 0h | 2019-01-11 17:00 | 2019-01-11 17:00 | 119FS+13h |  |  |
| 135 |  | 第十七次会议记录 | 0.5h | 2019-01-11 16:00 | 2019-01-11 16:30 | 134FS-1h |  |  |
| 136 |  | 项目总结报告 | 4h | 2019-01-14 08:00 | 2019-01-14 12:00 | 133 |  |  |
| 137 |  | 项目审核 | 2h | 2019-01-16 17:00 | 2019-01-16 19:00 | 136 |  |  |
| 138 |  | 项目提交 | 2h | 2019-01-16 17:00 | 2019-01-16 19:00 | 137 |  |  |
| 140 | 1.6 | **UMLPPT制作** | 109d | 2018-10-12 17:00 A | 2018-11-08 19:00 |  | 72% |  |
| 141 |  | uml概述PPT | 3h | 2018-10-12 17:00 A | 2018-10-13 18:00 A | 14 | 100% |  |

| ID | Task | Duration | Start | Finish | Predecessors | Complete |
| --- | --- | --- | --- | --- | --- | --- |
| 142 | uml概述PPT | 1d | 2018-10-16 17:00 A | 2018-10-17 10:00 A | 141 | 100% |
| 143 | uml工具PPT0.1 | 6h | 2018-10-20 08:00 A | 2018-10-20 15:00 A |  | 100% |
| 144 | uml工具PPT修改0.2 | 2h | 2018-10-27 17:00 A | 2018-10-28 10:00 A | 143FS+16h | 100% |
| 145 | uml基础1ppt0.1 | 6h | 2018-10-27 17:00 A | 2018-10-28 15:00 A | 31FS+3h | 100% |
| 146 | uml基础1ppt完善0.2 | 2h | 2018-11-02 17:00 A | 2018-11-03 10:00 A | 145FS+14h | 100% |
| 147 | uml基础2PPT0.1 | 5h | 2018-11-03 17:00 A | 2018-11-04 14:00 A | 37FS+2h | 100% |
| 148 | uml基础2PPT修改0.2 | 2h | 2018-11-08 17:00 A | 2018-11-08 19:00 A | 147FS+8h | 100% |
| 149 | uml3PPT | 2h | 2018-12-08 17:00 A | 2018-12-09 16:00 | 148 |  |
| 150 | uml4ppt | 3h | 2018-12-09 16:00 | 2018-12-10 10:00 | 149 |  |
| 152 | team building1 | 3h | 2018-12-17 08:00 | 2018-12-17 11:00 |  |  |
| 153 | team building2 | 3h | 2019-01-13 08:30 | 2019-01-13 11:30 | 152 |  |

## Version 2 (saved 2019-01-11)

Last finish stays 2019-01-16. Complete tasks 125 → 128.

Added:

| ID | Task | Duration | Start | Finish | Predecessors | Resources |
| --- | --- | --- | --- | --- | --- | --- |
| 79 | 教师用户第二次访谈 | 1h | 2018-12-24 17:00 A | 2018-12-24 18:00 A | 78 | 刘向辉; 左文正; 陈祥斌; 涂弘森; 王安栋 |
| 121 | 开发人员打分表 | 2h | 2019-01-05 17:00 A | 2019-01-05 19:00 A | 114 | 陈祥斌; 刘向辉; 涂弘森; 王安栋; 左文正 |
| 130 | 组内评审 | 3h | 2019-01-04 17:00 A | 2019-01-05 11:00 A | 125, 131SF | 左文正; 陈祥斌; 刘向辉; 涂弘森; 王安栋 |

Changed:

| ID | Task | Start | Finish | Duration | Complete | Predecessors |
| --- | --- | --- | --- | --- | --- | --- |
| 1 | **软件工程系列课程教学辅助网站** |  |  |  | 83% → 86% |  |
| 75 | 游客用户代表访谈 | 2018-12-30 17:00 A → 2018-12-26 17:00 A (-4d) | 2018-12-30 18:00 A → 2018-12-26 18:00 A (-4d) |  |  |  |
| 78 | 教师用户代表访谈 | 2018-12-21 17:00 A → 2018-12-14 17:00 A (-7d) | 2018-12-21 18:00 A → 2018-12-14 18:00 A (-7d) |  |  |  |
| 98 | 用户手册下半部分 |  |  |  |  | none → 97 |
| 103 | 软件需求规格说明书（SRS） |  |  |  |  | 97, 99, 100, 85 → 97, 99, 100, 85, 98 |
| 132 | 软件概要设计说明--初步 | 2018-12-27 17:00 → 2019-01-11 17:00 (+15d) | 2018-12-28 20:00 → 2019-01-13 12:00 (+16d) | 4h → 6h |  |  |
| 133 | 软件概要设计说明--修改 | 2018-12-29 17:00 → 2019-01-13 17:00 (+15d) | 2018-12-30 10:00 → 2019-01-13 20:00 (+14d) | 4h → 3h |  |  |
| 135 | 项目检验 | 2019-01-01 17:00 → 2019-01-09 17:00 (+8d) | 2019-01-04 18:00 → 2019-01-09 20:00 (+5d) | 7h → 2h |  |  |
| 136 | 项目修改 | 2019-01-05 19:00 → 2019-01-09 17:00 (+4d) | 2019-01-10 20:00 → 2019-01-11 19:00 (+1d) | 11h → 5h |  |  |
| 137 | 小组第十七次会议 |  | 2019-01-11 17:00 → 2019-01-11 18:00 | 0h → 1h |  |  |
| 146 | uml工具PPT0.1 |  |  |  |  | none → 145 |
